# SWGH-RCA

How a schedule from MS Project changed from version to version. A marks actual dates.

## Version 1 (saved 2015-08-16, file SWGH-RCA - Version 1.mpp)

Note of the change: proyecto

| ID | WBS | Task | Duration | Start | Finish | Predecessors | Total float |
| --- | --- | --- | --- | --- | --- | --- | --- |
| 1 | 1 | **SWGH-RCA** | 104.38d | 2015-05-05 | 2015-08-31 |  |  |
| 2 | 1.1 | **Inicio** | 104.38d | 2015-05-05 | 2015-08-31 |  |  |
| 3 | 1.1.1 | **INICIACION** | 7.12d? | 2015-05-05 | 2015-05-13 |  | -1d |
| 4 | 1.1.1.1 | **Gestion de Integracion** | 2d? | 2015-05-05 | 2015-05-07 |  | -1d |
| 5 |  | <Tarea nueva> | 1d? | 2015-05-05 | 2015-05-06 |  |  |
| 6 |  | <Tarea nueva> | 1d? | 2015-05-05 | 2015-05-06 |  |  |
| 7 |  | <Tarea nueva> | 1d? | 2015-05-05 | 2015-05-06 |  |  |
| 8 |  | Acta de Constitucion | 1d | 2015-05-05 | 2015-05-06 |  | -1d |
| 9 |  | Reunion | 1d | 2015-05-06 | 2015-05-07 | 8 | -1d |
| 10 | 1.1.1.2 | **Gestion de Interesados** | 2.25d | 2015-05-06 | 2015-05-07 | 4 |  |
| 11 |  | Registro de Interesados | 4h | 2015-05-06 | 2015-05-06 |  |  |
| 12 |  | Reuniones | 2h | 2015-05-07 | 2015-05-07 | 11 |  |
| 13 | 1.1.1.3 | **Metodologia UWE** | 4.12d | 2015-05-08 | 2015-05-13 | 10 | 0d |
| 14 |  | Caso de Uso | 2d | 2015-05-08 | 2015-05-09 |  |  |
| 15 |  | Caso de Uso Especificos | 1d | 2015-05-11 | 2015-05-11 | 14 |  |
| 16 |  | Diagrama de Actividades | 1d | 2015-05-12 | 2015-05-12 | 15 |  |
| 17 |  | Fin de la fase | 0d | 2015-05-13 | 2015-05-13 | 16 |  |
| 18 | 1.1.2 | **PLANIFICACION** | 43.88d | 2015-05-13 | 2015-07-02 | 3 | 0d |
| 19 | 1.1.2.1 | **Gestion de Integracion** | 1d | 2015-05-13 | 2015-05-14 |  | 1d |
| 20 |  | Plan para la direccion de proyecto | 1d | 2015-05-13 | 2015-05-14 |  | 1d |
| 21 | 1.1.2.2 | **Gestion del Alcance** | 6.38d | 2015-05-15 | 2015-05-21 | 19 |  |
| 22 |  | Plan de Gestion del Alcance | 4h | 2015-05-15 | 2015-05-15 |  |  |
| 23 |  | Plan de Gestion de Requisitos | 4h | 2015-05-15 | 2015-05-15 | 22 |  |
| 24 |  | Documentacion de requisitos | 1d | 2015-05-16 | 2015-05-16 | 23 |  |
| 25 |  | Matriz de trazabilidad de requisitos | 4h | 2015-05-18 | 2015-05-18 | 24 |  |
| 26 |  | Enunciado del Alcance | 1d | 2015-05-19 | 2015-05-19 | 25 |  |
| 27 |  | Linea Base del Alcance | 1d | 2015-05-20 | 2015-05-20 | 26 |  |
| 28 |  | Estructura de Desglose de Trabajo | 1d | 2015-05-21 | 2015-05-21 | 26 |  |
| 29 | 1.1.2.3 | **Gestion de Tiempo** | 9.25d | 2015-05-22 | 2015-06-02 | 21 | 0d |
| 30 |  | Plan Gestion del Cronograma | 1d | 2015-05-22 | 2015-05-22 |  |  |
| 31 |  | Matriz de asignacion de Responsables | 1d | 2015-05-22 | 2015-05-23 | 30 |  |
| 32 |  | Identificacion y Secuenciamiento de Actividades | 1d | 2015-05-25 | 2015-05-25 | 31 |  |
| 33 |  | Diagramas de red del cronograma | 2d | 2015-05-25 | 2015-05-27 | 32 | 3.12d |
| 34 |  | Estimacion de Recursos y Duracion de Actividades | 1d | 2015-05-28 | 2015-05-28 | 33 |  |
| 35 |  | Cronograma del Proyecto | 2d | 2015-05-28 | 2015-05-30 | 34 | 3.12d |
| 36 |  | Lista de Hitos | 1d | 2015-05-30 | 2015-06-01 | 35SS |  |
| 37 |  | Estructura de desglose de Recursos | 1d | 2015-06-02 | 2015-06-02 | 36 |  |
| 38 | 1.1.2.4 | **Gestion Costo** | 10.88d | 2015-06-03 | 2015-06-12 | 29 |  |
| 39 |  | Plan de Gestion de Costo | 1d | 2015-06-03 | 2015-06-03 |  |  |
| 40 |  | Estimacion de Costos | 4d | 2015-06-03 | 2015-06-08 | 39 | 1.12d |
| 41 |  | Presupuesto del Proyecto | 2d | 2015-06-08 | 2015-06-10 | 40 |  |
| 42 |  | Linea Base de Costos | 1d | 2015-06-10 | 2015-06-11 | 41 |  |
| 43 | 1.1.2.5 | **Gestion Calidad** | 3.38d | 2015-06-13 | 2015-06-17 | 38 | 0d |
| 44 |  | Plan Gestion de Calidad | 1d | 2015-06-13 | 2015-06-13 |  |  |
| 45 |  | Metricas de Calidad | 1d | 2015-06-15 | 2015-06-15 | 44 | 0.5d |
| 46 |  | Linea Base de Calidad | 1d | 2015-06-16 | 2015-06-16 | 45 | 0.5d |
| 47 |  | Matriz de Actividades de Calidad | 1d | 2015-06-17 | 2015-06-17 | 46 | 0.5d |
| 48 | 1.1.2.6 | **Gestion de RRHH** | 3.5d | 2015-06-18 | 2015-06-22 | 43 | -0.38d |
| 49 |  | Matriz de Asignacion de Responsables | 1d | 2015-06-18 | 2015-06-18 |  |  |
| 50 |  | Organigrama del Proyecto | 4h | 2015-06-19 | 2015-06-19 | 49 |  |
| 51 |  | Descripcion de Roles | 4h | 2015-06-19 | 2015-06-19 | 50 | 0d |
| 52 |  | Adqusicion del personal | 1d | 2015-06-20 | 2015-06-20 | 51 |  |
| 53 |  | Diagrama de Carga Personal | 4h | 2015-06-20 | 2015-06-22 | 52 |  |
| 54 |  | Plan de RRHH | 4h | 2015-06-22 | 2015-06-22 | 53 | -0.38d |
| 55 | 1.1.2.7 | **Gestion de Comunicación** | 1.88d | 2015-06-22 | 2015-06-24 | 48 | 0d |
| 56 |  | Plan de Gestion de Comunicación | 4h | 2015-06-22 | 2015-06-22 |  |  |
| 57 |  | Matriz de Comunicación del Proyecto | 1d | 2015-06-22 | 2015-06-23 | 56 | 0.12d |
| 58 |  | Glosario de Terminologias | 4h | 2015-06-23 | 2015-06-24 | 57 | 0.12d |
| 59 | 1.1.2.8 | **Gestion de Riesgos** | 3.25d | 2015-06-24 | 2015-06-26 | 55 |  |
| 60 |  | Plan de Gestion de Riesgos | 1d | 2015-06-24 | 2015-06-24 |  |  |
| 61 |  | Identificacion y Evaluacion Cualitativa de Riesgos | 1d | 2015-06-25 | 2015-06-25 |  |  |
| 62 |  | Plan de Respuesta a Riesgos | 1d | 2015-06-26 | 2015-06-26 |  |  |
| 63 | 1.1.2.9 | **Gestion de Adquisiciones** | 1.38d | 2015-06-27 | 2015-06-29 | 59 | 0d |
| 64 |  | Plan de Gestion de Adquisiciones | 1.25d | 2015-06-27 | 2015-06-27 |  |  |
| 65 |  | Matriz de Adquisiciones del Proyecto | 1d | 2015-06-29 | 2015-06-29 | 64 | 0.5d |
| 66 | 1.1.2.10 | **Gestion de Interesados** | 1.25d | 2015-06-30 | 2015-06-30 | 63 |  |
| 67 |  | Plan de Gestion de Interesados | 1d | 2015-06-30 | 2015-06-30 |  |  |
| 68 | 1.1.2.11 | **Metodologia UWE** | 4.25d | 2015-06-29 | 2015-07-02 | 66 |  |
| 69 |  | Modelo Entidad Relacion | 4h | 2015-06-29 | 2015-06-29 |  |  |
| 70 |  | Modelo Logico | 4h | 2015-06-29 | 2015-06-29 | 69 |  |

| ID | WBS | Task | Duration | Start | Finish | Predecessors | Total float |
| --- | --- | --- | --- | --- | --- | --- | --- |
| 71 |  | Modelo Fisico | 1d | 2015-06-30 | 2015-06-30 | 70 |  |
| 72 |  | Diagrama de navegacion | 8h | 2015-06-30 | 2015-07-01 | 71 |  |
| 73 |  | Fin Fase | 0d | 2015-07-01 | 2015-07-01 | 72 |  |
| 74 | 1.1.3 | **EJECUCION** | 17d | 2015-07-02 | 2015-07-18 |  |  |
| 75 | 1.1.3.1 | **Gestion de Integracion** | 3d | 2015-07-03 | 2015-07-06 |  |  |
| 76 |  | Datos de desempeño del trabajo | 1d? | 2015-07-03 | 2015-07-03 |  |  |
| 77 |  | Solicitud de Cambios | 1d? | 2015-07-03 | 2015-07-03 |  |  |
| 78 |  | Actualizacion de documentos | 1d? | 2015-07-03 | 2015-07-03 |  |  |
| 79 | 1.1.3.2 | **Gestion de Calidad** | 2.25d | 2015-07-06 | 2015-07-07 |  |  |
| 80 |  | Solicitud de Cambios | 1d? | 2015-07-06 | 2015-07-06 |  |  |
| 81 |  | Actualizaciones de documentos | 1d? | 2015-07-06 | 2015-07-06 |  |  |
| 82 | 1.1.3.3 | **Gestion de RRHH** | 3.25d | 2015-07-08 | 2015-07-10 |  |  |
| 83 |  | Asignacion del personal | 1d? | 2015-07-08 | 2015-07-08 |  |  |
| 84 |  | Calendario de Recursos | 1d? | 2015-07-08 | 2015-07-08 |  |  |
| 85 |  | Evaluacion de desempeño | 1d? | 2015-07-08 | 2015-07-08 |  |  |
| 86 |  | Actualizacion de documentos | 1d? | 2015-07-08 | 2015-07-08 |  |  |
| 87 | 1.1.3.4 | **Gestion de Comunicación** | 1d | 2015-06-11 | 2015-06-11 |  |  |
| 88 |  | Comunicación del proyecto | 1d? | 2015-06-11 | 2015-06-11 |  |  |
| 89 |  | Actualizacion de los documentos | 1d? | 2015-06-11 | 2015-06-11 |  |  |
| 90 | 1.1.3.5 | **Gestion de Adquisiciones** | 3.25d | 2015-07-13 | 2015-07-15 |  |  |
| 91 |  | Vendedores Seleccionados | 1d? | 2015-07-13 | 2015-07-13 |  |  |
| 92 |  | Acuerdos | 1d? | 2015-07-13 | 2015-07-13 |  |  |
| 93 |  | Calendario de Recursos | 1d? | 2015-07-13 | 2015-07-13 |  |  |
| 94 |  | Solicitud de Cambios | 1d? | 2015-07-13 | 2015-07-13 |  |  |
| 95 |  | Actualizacion de Documentos | 1d? | 2015-07-13 | 2015-07-13 |  |  |
| 96 | 1.1.3.6 | **Gestion de Interesados** | 2.25d | 2015-07-16 | 2015-07-17 |  |  |
| 97 |  | Registro de incidentes | 1d? | 2015-07-16 | 2015-07-16 |  |  |
| 98 |  | Solicitudes de Cambio | 1d? | 2015-07-16 | 2015-07-16 |  |  |
| 99 |  | Actualizaciones de documentos | 1d? | 2015-07-16 | 2015-07-16 |  |  |
| 100 |  | Fin fase | 0d | 2015-07-16 | 2015-07-16 |  |  |
| 101 | 1.1.4 | **SEGUIMIENTO Y CONTROL** | 31.62d | 2015-07-20 | 2015-08-25 | 74 | 0d |
| 102 | 1.1.4.1 | **Gestion de Integracion** | 4.25d | 2015-07-20 | 2015-07-23 |  |  |
| 103 |  | Solicitud de Cambios | 1d? | 2015-07-20 | 2015-07-20 |  |  |
| 104 |  | Informes de desempeño de trabajo | 1d? | 2015-07-20 | 2015-07-20 |  |  |
| 105 |  | Solicitudes Aprobadas | 1d? | 2015-07-20 | 2015-07-20 |  |  |
| 106 |  | Registro de cambios | 1d? | 2015-07-20 | 2015-07-20 |  |  |
| 107 |  | Actualizaciones de documentos | 1d | 2015-07-20 | 2015-07-20 |  |  |
| 108 | 1.1.4.2 | **Gestion del Alcance** | 4.38d | 2015-07-23 | 2015-07-27 |  |  |
| 109 |  | Solicitudes de Cambio | 1d? | 2015-07-23 | 2015-07-23 |  |  |
| 110 |  | Informes de desempeño de trabajo | 1d? | 2015-07-23 | 2015-07-23 |  |  |
| 111 |  | Actualizacion de los documentos | 1d? | 2015-07-23 | 2015-07-23 |  |  |
| 112 | 1.1.4.3 | **Gestion del Tiempo** | 3.25d | 2015-07-28 | 2015-07-30 |  |  |
| 113 |  | Informes de desempeño de trabajo | 1d? | 2015-07-28 | 2015-07-28 |  |  |
| 114 |  | Pronostico del cronograma | 1d? | 2015-07-28 | 2015-07-28 |  |  |
| 115 |  | Solicitudes de cambio | 1d? | 2015-07-28 | 2015-07-28 |  |  |
| 116 |  | Actualizaciones de documentos | 1d? | 2015-07-28 | 2015-07-28 |  |  |
| 117 | 1.1.4.4 | **Gestion de Costos** | 4.38d | 2015-07-31 | 2015-08-04 |  |  |
| 118 |  | Informes de desempeño de trabajo | 1d? | 2015-07-31 | 2015-07-31 |  |  |
| 119 |  | Pronostico de Costos | 1d? | 2015-07-31 | 2015-07-31 |  |  |
| 120 |  | Solicitudes de Cambio | 1d? | 2015-07-31 | 2015-07-31 |  |  |
| 121 |  | Actualizaciones de documentos | 1d? | 2015-07-31 | 2015-07-31 |  |  |
| 122 | 1.1.4.5 | **Gestion de Calidad** | 3.25d | 2015-08-05 | 2015-08-07 |  |  |
| 123 |  | Medidas de Control de Calidad | 1d? | 2015-08-05 | 2015-08-05 |  |  |
| 124 |  | Cambios validos | 1d? | 2015-08-05 | 2015-08-05 |  |  |
| 125 |  | Informes de desempeño de trabajo | 1d? | 2015-08-05 | 2015-08-05 |  |  |
| 126 |  | Solicitudes de Cambio | 1d? | 2015-08-05 | 2015-08-05 |  |  |
| 127 |  | Actualizaciones de documentos | 1d? | 2015-08-05 | 2015-08-05 |  |  |
| 128 | 1.1.4.6 | **Gestion de Comunicaciones** | 3.25d | 2015-08-10 | 2015-08-12 |  |  |
| 129 |  | Informes de desempeño de trabajo | 1d? | 2015-08-10 | 2015-08-10 |  |  |
| 130 |  | Solicitudes de Cambio | 1d? | 2015-08-10 | 2015-08-10 |  |  |
| 131 |  | Actualizaciones de documentos | 1d? | 2015-08-10 | 2015-08-10 |  |  |
| 132 | 1.1.4.7 | **Gestion de Riesgos** | 2.25d | 2015-08-13 | 2015-08-14 |  |  |
| 133 |  | Informes de desempeño de trabajo | 1d? | 2015-08-13 | 2015-08-13 |  |  |
| 134 |  | Solicitudes de Cambio | 1d? | 2015-08-13 | 2015-08-13 |  |  |
| 135 |  | Actualizaciones de documentos | 1d? | 2015-08-13 | 2015-08-13 |  |  |
| 136 | 1.1.4.8 | **Gestion de Adquisiciones** | 0.88d | 2015-08-15 | 2015-08-17 |  |  |
| 137 |  | Informes de desempeño de trabajo | 1d? | 2015-08-15 | 2015-08-15 |  |  |
| 138 |  | Solicitudes de Cambio | 1d? | 2015-08-15 | 2015-08-15 |  |  |
| 139 |  | Actualizaciones de documentos | 1d? | 2015-08-15 | 2015-08-15 |  |  |
| 140 | 1.1.4.9 | **Gestion de Interesados** | 2.25d | 2015-08-18 | 2015-08-19 |  |  |

| ID | WBS | Task | Duration | Start | Finish | Predecessors | Total float |
| --- | --- | --- | --- | --- | --- | --- | --- |
| 141 |  | Informes de desempeño de trabajo | 1d? | 2015-08-18 | 2015-08-18 |  |  |
| 142 |  | Solicitudes de Cambio | 1d? | 2015-08-18 | 2015-08-18 |  |  |
| 143 |  | Actualizacion de documentos | 1d? | 2015-08-18 | 2015-08-18 |  |  |
| 144 | 1.1.4.10 | **Metodologia UWE** | 5.38d | 2015-08-20 | 2015-08-25 |  |  |
| 145 |  | Interfaces Abstractas | 1d | 2015-08-20 | 2015-08-20 |  |  |
| 146 |  | Definir StoryBoard | 1d | 2015-08-20 | 2015-08-20 |  |  |
| 147 |  | Prototipos de Interfaces | 1d | 2015-08-20 | 2015-08-20 |  |  |
| 148 |  | Fin Fase | 0d | 2015-08-20 | 2015-08-20 |  |  |
| 149 | 1.1.5 | **CIERRE** | 4.12d | 2015-08-26 | 2015-08-31 | 101 | 0d |
| 150 | 1.1.5.1 | **Gestion de Integracion** | 1.25d | 2015-08-26 | 2015-08-26 |  |  |
| 151 |  | Transferencia de producto | 1d? | 2015-08-26 | 2015-08-26 |  |  |
| 152 |  | Actualizaciones de documentos | 1d? | 2015-08-26 | 2015-08-26 |  |  |
| 153 | 1.1.5.2 | **Gestion de Adquisiciones** | 1.25d | 2015-08-27 | 2015-08-27 |  |  |
| 154 |  | Adquisiciones cerradas | 1d? | 2015-08-27 | 2015-08-27 |  |  |
| 155 |  | Actualizaciones de documentos | 1d? | 2015-08-27 | 2015-08-27 |  |  |
| 156 | 1.1.5.3 | **Metodologia UWE** | 5.38d | 2015-08-26 | 2015-08-31 |  |  |
| 157 |  | Prueba del Sistema | 1d | 2015-08-26 | 2015-08-26 |  |  |
| 158 |  | Plan de Instalacion | 1d | 2015-08-26 | 2015-08-26 |  |  |
| 159 |  | Fin fase | 1d? | 2015-08-26 | 2015-08-26 |  |  |
| 160 |  | FIN | 0d | 2015-08-05 | 2015-08-05 |  |  |

## Version 2 (saved 2015-08-24, file SWGH-RCA - Verison 2.mpp)

Note of the change: proyecto

Last finish 2015-08-31 → 2015-08-26 (-5d). Complete tasks 0 → 62.

Added:

| ID | Task | Duration | Start | Finish | Predecessors | Resources |
| --- | --- | --- | --- | --- | --- | --- |
| 5 | Busqueda de la empresa | 4h | 2015-05-05 09:00 A | 2015-05-05 16:00 A |  | Transporte [50%]; Alimentos [50%] |
| 8 | Recopilar informacion | 2h | 2015-05-05 19:00 A | 2015-05-06 15:46 A | 7 | Analista; Transporte [50%] |
| 9 | Enunciado del Trabajo del proyecto | 2h | 2015-05-05 21:00 A | 2015-05-05 23:00 A | 8 | Equipo de Computo |
| 110 | Fin Fase | 0d | 2015-08-01 09:00 | 2015-08-01 09:00 | 109 | Equipo de Computo; Equipo de Oficina [50%] |

Removed: 9 Reunion; 12 Reuniones; 17 Fin de la fase; 76 Datos de desempeño del trabajo; 78 Actualizacion de documentos; 84 Calendario de Recursos; 85 Evaluacion de desempeño; 86 Actualizacion de documentos; 88 Comunicación del proyecto; 90 Gestion de Adquisiciones; 91 Vendedores Seleccionados; 92 Acuerdos; 93 Calendario de Recursos; 94 Solicitud de Cambios; 95 Actualizacion de Documentos; 97 Registro de incidentes; 98 Solicitudes de Cambio; 99 Actualizaciones de documentos; 105 Solicitudes Aprobadas; 106 Registro de cambios; 107 Actualizaciones de documentos; 111 Actualizacion de los documentos; 114 Pronostico del cronograma; 115 Solicitudes de cambio; 116 Actualizaciones de documentos; 119 Pronostico de Costos; 120 Solicitudes de Cambio; 121 Actualizaciones de documentos; 124 Cambios validos; 125 Informes de desempeño de trabajo; 126 Solicitudes de Cambio; 127 Actualizaciones de documentos; 130 Solicitudes de Cambio; 131 Actualizaciones de documentos; 134 Solicitudes de Cambio; 135 Actualizaciones de documentos; 136 Gestion de Adquisiciones; 137 Informes de desempeño de trabajo; 138 Solicitudes de Cambio; 139 Actualizaciones de documentos; 142 Solicitudes de Cambio; 143 Actualizacion de documentos

Changed:

| ID | Task | Start | Finish | Duration | Complete | Total float | Predecessors | Other |
| --- | --- | --- | --- | --- | --- | --- | --- | --- |
| 1 | **SWGH-RCA** | 2015-05-05 → 2015-05-05 09:00 A | 2015-08-31 → 2015-08-26 17:00 (-5d) | 104.38d → 98d | 0% → 98% |  |  |  |
| 2 | **Inicio** | 2015-05-05 → 2015-05-05 09:00 A | 2015-08-31 → 2015-08-26 17:00 (-5d) | 104.38d → 98d | 0% → 98% |  |  |  |
| 3 | **INICIACION** | 2015-05-05 → 2015-05-05 09:00 A | 2015-05-13 → 2015-05-12 23:00 (-1d) | 7.12d? → 7d | 0% → 99% | -1d → 90.38d |  | resources Franklin Gomez; Alejandro Marquez; Alimentos [50%]; Equipo de Computo; Equipo de Oficina [50%]; Impresiones [50%]; Karen Gomez; Miguel Siguenza; Transporte [50%] → Analista; Programador 2; Alimentos [50%]; Equipo de Computo; Equipo de Oficina [50%]; Impresiones [50%]; Administrador; Programador 1; Transporte [50%] |
| 4 | **Gestion de Integracion** | 2015-05-05 → 2015-05-05 09:00 A | 2015-05-07 → 2015-05-07 17:00 | 2d? → 3d | 0% → 99% | -1d → none |  | resources Franklin Gomez → Analista |
| 6 | Reunion con el patrocinador | 2015-05-05 → 2015-05-05 14:00 A | 2015-05-06 → 2015-05-05 20:33 A (-1d) | 1d? → 4h | 0% → 100% |  | none → 5 | was named <Tarea nueva>; resources none → Administrador; Analista; Programador 1; Programador 2; Transporte [50%] |
| 7 | Reunion con el gerente de la empresa | 2015-05-05 → 2015-05-05 16:00 A | 2015-05-06 → 2015-05-06 15:06 A | 1d? → 4h | 0% → 100% |  | none → 6 | was named <Tarea nueva>; resources none → Administrador; Analista; Programador 1; Programador 2; Transporte [50%] |
| 10 | Acta de Constitucion | 2015-05-05 → 2015-05-06 14:00 A (+1d) | 2015-05-06 → 2015-05-06 21:00 | 1d → 6h | 0% → 97% | -1d → 95.62d | none → 9 | constraint none → finish no earlier than 2015-05-06 19:00; resources Alimentos [50%]; Transporte [50%] → Alimentos [33.3%]; Transporte [33.3%]; Equipo de Computo; Equipo de Oficina [50%] |
| 11 | **Gestion de Interesados** | 2015-05-06 → 2015-05-07 09:00 A (+1d) | 2015-05-07 → 2015-05-07 13:00 A | 2.25d → 4h | 0% → 100% |  |  | resources none → Administrador |
| 12 | Registro de Interesados | 2015-05-06 → 2015-05-07 09:00 A (+1d) | 2015-05-06 → 2015-05-07 13:00 A (+1d) |  | 0% → 100% |  |  | resources Karen Gomez → Administrador |
| 13 | **Metodologia UWE** | 2015-05-08 → 2015-05-08 14:00 A | 2015-05-13 → 2015-05-12 23:00 (-1d) | 4.12d → 4d | 0% → 99% |  |  | resources Alejandro Marquez → Programador 2 |
| 14 | Caso de Uso | 2015-05-08 → 2015-05-08 14:00 A | 2015-05-09 → 2015-05-08 23:00 A (-1d) | 2d → 1d | 0% → 100% |  |  | constraint none → start no earlier than 2015-05-08 09:00 |
| 15 | Caso de Uso Especificos | 2015-05-11 → 2015-05-09 08:00 A (-2d) | 2015-05-11 → 2015-05-09 18:00 A (-2d) |  | 0% → 100% |  |  | constraint none → start no earlier than 2015-05-08 09:00; resources Impresiones [50%] → Impresiones [25%] |
| 16 | Diagrama de Actividades | 2015-05-12 → 2015-05-11 14:00 A (-1d) | 2015-05-12 → 2015-05-12 23:00 | 1d → 2d | 0% → 98% | none → 0d |  | constraint none → finish no earlier than 2015-05-09 19:00; resources Impresiones [50%] → Impresiones [25%] |
| 17 | Fin Fase | 2015-07-01 → 2015-05-13 14:00 (-49d) | 2015-07-01 → 2015-05-13 14:00 (-49d) |  |  |  | 72 → 16 | resources none → Equipo de Computo |
| 18 | **PLANIFICACION** | 2015-05-13 → 2015-05-13 09:00 A | 2015-07-02 → 2015-06-23 17:00 (-9d) | 43.88d → 36d | 0% → 99% | 0d → none |  | resources Miguel Siguenza → none |
| 19 | **Gestion de Integracion** | 2015-05-13 → 2015-05-13 09:00 A | 2015-05-14 → 2015-05-13 18:00 A (-1d) | 1d → 9h | 0% → 100% | 1d → none |  | resources Miguel Siguenza → Alimentos [50%]; Transporte [50%] |
| 20 | Plan para la direccion de proyecto | 2015-05-13 → 2015-05-13 14:00 A | 2015-05-14 → 2015-05-13 16:00 A (-1d) | 1d → 2h | 0% → 100% | 1d → none |  | resources Franklin Gomez → Analista [112.5%] |
| 21 | **Gestion del Alcance** | 2015-05-15 → 2015-05-14 09:00 A (-1d) | 2015-05-21 → 2015-05-18 18:00 A (-3d) | 6.38d → 33h | 0% → 100% |  |  | resources none → Administrador; Equipo de Computo; Equipo de Oficina [50%] |
| 22 | Plan de Gestion del Alcance | 2015-05-15 → 2015-05-14 09:00 A (-1d) | 2015-05-15 → 2015-05-14 13:00 A (-1d) |  | 0% → 100% |  |  | resources none → Equipo de Oficina [50%] |
| 23 | Plan de Gestion de Requisitos | 2015-05-15 → 2015-05-14 14:00 A (-1d) | 2015-05-15 → 2015-05-14 16:00 A (-1d) | 4h → 2h | 0% → 100% |  |  | resources Franklin Gomez → Analista |
| 24 | Documentacion de requisitos | 2015-05-16 → 2015-05-14 16:00 A (-2d) | 2015-05-16 → 2015-05-14 21:00 A (-2d) | 1d → 4h | 0% → 100% |  |  | resources Franklin Gomez → Analista; Equipo de Computo |
| 25 | Matriz de trazabilidad de requisitos | 2015-05-18 → 2015-05-14 21:00 A (-4d) | 2015-05-18 → 2015-05-15 14:12 A (-3d) |  | 0% → 100% |  |  | resources none → Analista; Equipo de Computo |
| 26 | Enunciado del Alcance | 2015-05-19 → 2015-05-15 14:00 A (-4d) | 2015-05-19 → 2015-05-15 18:00 A (-4d) | 1d → 4h | 0% → 100% |  |  | resources none → Administrador; Equipo de Computo |
| 27 | Linea Base del Alcance | 2015-05-20 → 2015-05-15 19:00 A (-5d) | 2015-05-20 → 2015-05-15 23:00 A (-5d) | 1d → 4h | 0% → 100% |  |  | resources none → Equipo de Computo |
| 28 | Estructura de Desglose de Trabajo | 2015-05-21 → 2015-05-16 08:00 A (-5d) | 2015-05-21 → 2015-05-16 12:00 A (-5d) | 1d → 4h | 0% → 100% |  | 26 → 27 | resources none → Equipo de Computo |
| 29 | **Gestion de Tiempo** | 2015-05-22 → 2015-05-19 09:00 A (-3d) | 2015-06-02 → 2015-05-20 20:00 (-13d) | 9.25d → 18h | 0% → 99% | 0d → none |  | resources Miguel Siguenza → Analista |
| 30 | Plan Gestion del Cronograma | 2015-05-22 → 2015-05-19 09:00 A (-3d) | 2015-05-22 → 2015-05-19 11:00 A (-3d) | 1d → 2h | 0% → 100% |  |  | resources none → Administrador; Programador 2 |
| 31 | Matriz de asignacion de Responsables | 2015-05-22 → 2015-05-19 14:00 A (-3d) | 2015-05-23 → 2015-05-19 16:00 A (-4d) | 1d → 2h | 0% → 100% |  |  | resources none → Analista; Equipo de Computo |
| 32 | Identificacion y Secuenciamiento de Actividades | 2015-05-25 → 2015-05-19 14:00 A (-6d) | 2015-05-25 → 2015-05-19 16:00 (-6d) | 1d → 2h | 0% → 95% |  | 31 → 30 | resources Franklin Gomez → Analista |
| 33 | Diagramas de red del cronograma | 2015-05-25 → 2015-05-19 09:00 A (-6d) | 2015-05-27 → 2015-05-19 16:00 A (-8d) | 2d → 2h | 0% → 100% | 3.12d → none |  | constraint none → start no earlier than 2015-05-20 09:00; resources none → Equipo de Computo |
| 34 | Estimacion de Recursos y Duracion de Actividades | 2015-05-28 → 2015-05-20 17:00 A (-8d) | 2015-05-28 → 2015-05-20 20:00 A (-8d) | 1d → 2h | 0% → 100% |  |  | resources none → Equipo de Computo |
| 35 | Cronograma del Proyecto | 2015-05-28 → 2015-05-20 09:00 A (-8d) | 2015-05-30 → 2015-05-20 18:00 A (-10d) | 2d → 4h | 0% → 100% | 3.12d → none |  | constraint none → start no earlier than 2015-05-21 09:00; resources Franklin Gomez → Analista |
| 36 | Lista de Hitos | 2015-05-30 → 2015-05-20 09:00 A (-10d) | 2015-06-01 → 2015-05-20 19:06 (-12d) | 1d → 2h | 0% → 95% | none → 0.11d | 35SS → 35 | resources none → Equipo de Computo |
| 37 | Estructura de desglose de Recursos | 2015-06-02 → 2015-05-20 09:00 A (-13d) | 2015-06-02 → 2015-05-20 16:00 A (-13d) | 1d → 2h | 0% → 100% |  |  | resources none → Equipo de Computo |
| 38 | **Gestion Costo** | 2015-06-03 → 2015-05-23 09:00 A (-11d) | 2015-06-12 → 2015-05-27 19:00 (-16d) | 10.88d → 27h | 0% → 99% |  |  | resources Franklin Gomez → Analista; Programador 2 |
| 39 | Plan de Gestion de Costo | 2015-06-03 → 2015-05-23 09:00 A (-11d) | 2015-06-03 → 2015-05-23 15:00 A (-11d) | 1d → 4h | 0% → 100% |  |  | resources none → Administrador |
| 40 | Estimacion de Costos | 2015-06-03 → 2015-05-25 14:00 A (-9d) | 2015-06-08 → 2015-05-25 23:00 A (-14d) | 4d → 8h | 0% → 100% | 1.12d → none |  | constraint none → start no earlier than 2015-05-25 09:00; resources none → Administrador |
| 41 | Presupuesto del Proyecto | 2015-06-08 → 2015-05-26 14:00 A (-13d) | 2015-06-10 → 2015-05-26 18:00 A (-15d) | 2d → 4h | 0% → 100% |  |  | resources none → Administrador |
| 42 | Linea Base de Costos | 2015-06-10 → 2015-05-26 19:00 A (-15d) | 2015-06-11 → 2015-05-27 18:00 A (-15d) | 1d → 8h | 0% → 100% |  |  | resources none → Equipo de Computo |
| 43 | **Gestion Calidad** | 2015-06-13 → 2015-05-28 09:00 A (-16d) | 2015-06-17 → 2015-05-30 12:00 (-18d) | 3.38d → 25h | 0% → 99% | 0d → none |  | resources none → Administrador |
| 44 | Plan Gestion de Calidad | 2015-06-13 → 2015-05-28 09:00 A (-16d) | 2015-06-13 → 2015-05-28 13:00 (-16d) | 1d → 4h | 0% → 99% |  |  | resources none → Administrador |
| 45 | Metricas de Calidad | 2015-06-15 → 2015-05-28 14:00 A (-18d) | 2015-06-15 → 2015-05-28 18:00 A (-18d) | 1d → 4h | 0% → 100% | 0.5d → none |  | resources none → Administrador |
| 46 | Linea Base de Calidad | 2015-06-16 → 2015-05-29 14:00 A (-18d) | 2015-06-16 → 2015-05-29 18:00 (-18d) | 1d → 4h | 0% → 99% | 0.5d → 0.99d |  | constraint none → start no earlier than 2015-05-29 09:00; resources none → Administrador |
| 47 | Matriz de Actividades de Calidad | 2015-06-17 → 2015-05-29 19:00 A (-19d) | 2015-06-17 → 2015-05-30 12:00 (-18d) | 1d → 8h | 0% → 99% | 0.5d → 74.88d |  | constraint none → finish no earlier than 2015-05-27 19:00; resources none → Equipo de Computo; Equipo de Oficina; Impresiones |
| 48 | **Gestion de RRHH** | 2015-06-18 → 2015-06-01 09:00 A (-17d) | 2015-06-22 → 2015-06-03 23:00 (-19d) | 3.5d → 3d | 0% → 99% | -0.38d → 0d |  | resources none → Analista |
| 49 | Matriz de Asignacion de Responsables | 2015-06-18 → 2015-06-01 09:00 A (-17d) | 2015-06-18 → 2015-06-01 18:00 A (-17d) | 1d → 4h | 0% → 100% |  |  | resources none → Equipo de Computo |
| 50 | Organigrama del Proyecto | 2015-06-19 → 2015-06-01 14:00 A (-18d) | 2015-06-19 → 2015-06-01 18:00 A (-18d) |  | 0% → 100% |  |  | resources none → Equipo de Computo |
| 51 | Descripcion de Roles | 2015-06-19 → 2015-06-02 14:00 A (-17d) | 2015-06-19 → 2015-06-02 18:00 A (-17d) |  | 0% → 100% | 0d → none |  | constraint none → start no earlier than 2015-06-02 09:00; resources none → Equipo de Computo |
| 52 | Adquisicion del personal | 2015-06-20 → 2015-06-02 19:00 A (-18d) | 2015-06-20 → 2015-06-02 22:00 A (-18d) | 1d → 3h | 0% → 100% |  |  | was named Adqusicion del personal; resources none → Equipo de Computo |
| 53 | Diagrama de Carga Personal | 2015-06-20 → 2015-06-03 14:00 A (-17d) | 2015-06-22 → 2015-06-03 18:00 A (-19d) |  | 0% → 100% |  |  | constraint none → start no earlier than 2015-06-03 09:00; resources none → Equipo de Computo |
| 54 | Plan de RRHH | 2015-06-22 → 2015-06-03 19:00 A (-19d) | 2015-06-22 → 2015-06-03 23:00 A (-19d) |  | 0% → 100% | -0.38d → none |  | constraint none → start no earlier than 2015-06-03 09:00; resources none → Equipo de Computo |
| 55 | **Gestion de Comunicación** | 2015-06-22 → 2015-06-05 09:00 A (-17d) | 2015-06-24 → 2015-06-06 12:00 (-18d) | 1.88d → 17h | 0% → 98% | 0d → none |  | resources none → Administrador |
| 56 | Plan de Gestion de Comunicación | 2015-06-22 → 2015-06-05 09:00 A (-17d) | 2015-06-22 → 2015-06-05 13:00 A (-17d) |  | 0% → 100% |  |  | resources none → Administrador |
| 57 | Matriz de Comunicación del Proyecto | 2015-06-22 → 2015-06-05 14:00 A (-17d) | 2015-06-23 → 2015-06-05 18:00 (-18d) | 1d → 4h | 0% → 95% | 0.12d → 0.49d |  | resources none → Equipo de Computo |
| 58 | Glosario de Terminologias | 2015-06-23 → 2015-06-05 19:00 A (-18d) | 2015-06-24 → 2015-06-05 23:00 (-19d) |  | 0% → 99% | 0.12d → 69.38d |  | constraint none → start no earlier than 2015-06-03 09:00; resources none → Equipo de Computo |
| 59 | **Gestion de Riesgos** | 2015-06-24 → 2015-06-08 09:00 A (-16d) | 2015-06-26 → 2015-06-10 18:00 (-16d) | 3.25d → 25h | 0% → 99% |  |  | resources none → Programador 2 |
| 60 | Plan de Gestion de Riesgos | 2015-06-24 → 2015-06-08 09:00 A (-16d) | 2015-06-24 → 2015-06-08 13:00 A (-16d) | 1d → 4h | 0% → 100% |  |  | resources none → Analista |
| 61 | Identificacion y Evaluacion Cualitativa de Riesgos | 2015-06-25 → 2015-06-08 14:00 A (-17d) | 2015-06-25 → 2015-06-08 18:00 A (-17d) | 1d → 4h | 0% → 100% |  | none → 60 | resources none → Equipo de Computo |
| 62 | Plan de Respuesta a Riesgos | 2015-06-26 → 2015-06-08 19:00 A (-18d) | 2015-06-26 → 2015-06-08 23:00 A (-18d) | 1d → 4h | 0% → 100% |  | none → 61 | resources none → Equipo de Computo |
| 63 | **Gestion de Adquisiciones** | 2015-06-27 → 2015-06-11 09:00 A (-16d) | 2015-06-29 → 2015-06-12 18:00 (-17d) | 1.38d → 17h | 0% → 95% | 0d → none |  | resources none → Administrador |
| 64 | Plan de Gestion de Adquisiciones | 2015-06-27 → 2015-06-11 09:00 A (-16d) | 2015-06-27 → 2015-06-11 13:00 (-16d) | 1.25d → 4h | 0% → 95% |  |  | resources none → Administrador |
| 65 | Matriz de Adquisiciones del Proyecto | 2015-06-29 → 2015-06-11 14:00 A (-18d) | 2015-06-29 → 2015-06-11 18:00 (-18d) | 1d → 4h | 0% → 95% | 0.5d → 64.88d |  | constraint none → finish no earlier than 2015-06-06 19:00; resources none → Administrador |
| 66 | **Gestion de Interesados** | 2015-06-30 → 2015-06-12 09:00 A (-18d) | 2015-06-30 → 2015-06-12 17:00 A (-18d) | 1.25d → 1d | 0% → 100% |  |  | resources none → Administrador; Analista |
| 67 | Plan de Gestion de Interesados | 2015-06-30 → 2015-06-12 09:00 A (-18d) | 2015-06-30 → 2015-06-12 15:00 A (-18d) | 1d → 6h | 0% → 100% |  |  | resources none → Administrador |
| 68 | **Metodologia UWE** | 2015-06-29 → 2015-06-15 09:00 (-14d) | 2015-07-02 → 2015-06-23 17:00 (-9d) | 4.25d → 8d | 0% → 99% |  |  | resources Alejandro Marquez → Programador 2 |
| 69 | Modelo Entidad Relacion | 2015-06-29 → 2015-06-12 15:00 A (-17d) | 2015-06-29 → 2015-06-15 15:00 A (-14d) | 4h → 2d | 0% → 100% |  |  |  |
| 70 | Modelo Logico | 2015-06-29 → 2015-06-16 17:00 A (-13d) | 2015-06-29 → 2015-06-18 17:00 (-11d) | 4h → 2d | 0% → 95% |  |  |  |
| 71 | Modelo Fisico | 2015-06-30 → 2015-06-18 17:00 A (-12d) | 2015-06-30 → 2015-06-20 11:00 A (-10d) | 1d → 2d | 0% → 100% |  |  |  |
| 72 | Diagrama de navegacion | 2015-06-30 → 2015-06-20 11:00 A (-10d) | 2015-07-01 → 2015-06-23 17:00 A (-8d) | 8h → 2d | 0% → 100% |  |  |  |
| 73 | Fin Fase | 2015-08-20 → 2015-06-23 17:00 (-58d) | 2015-08-20 → 2015-06-23 17:00 (-58d) |  |  |  | none → 72 | resources none → Equipo de Computo |

| ID | Task | Start | Finish | Duration | Complete | Total float | Predecessors | Other |
| --- | --- | --- | --- | --- | --- | --- | --- | --- |
| 74 | **EJECUCION** | 2015-07-02 → 2015-06-25 09:00 A (-7d) | 2015-07-18 → 2015-07-02 17:00 (-16d) | 17d → 7d | 0% → 99% |  | none → 18 | resources Karen Gomez → Administrador |
| 75 | **Gestion de Integracion** | 2015-07-03 → 2015-06-25 09:00 A (-8d) | 2015-07-06 → 2015-06-25 17:00 A (-11d) | 3d → 8h | 0% → 100% |  |  | resources Karen Gomez → Administrador |
| 76 | Gestionar el trabajo del proyecto | 2015-07-03 → 2015-06-25 09:00 A (-8d) | 2015-07-03 → 2015-06-25 17:00 A (-8d) | 1d? → 8h | 0% → 100% |  |  | was named Solicitud de Cambios; resources none → Alimentos [50%]; Equipo de Computo; Impresiones [50%]; Transporte [50%] |
| 77 | **Gestion de Calidad** | 2015-07-06 → 2015-06-26 09:00 A (-10d) | 2015-07-07 → 2015-06-29 23:00 (-8d) | 2.25d → 3d | 0% → 99% | none → 0d | none → 75 | resources Miguel Siguenza → Administrador |
| 78 | Aseguramiento de la calidad | 2015-07-06 → 2015-06-26 09:00 A (-10d) | 2015-07-06 → 2015-06-26 17:00 A (-10d) | 1d? → 8h | 0% → 100% |  |  | was named Solicitud de Cambios; resources none → Analista |
| 79 | Datos de Desempeño del trabajo | 2015-07-06 → 2015-06-27 09:00 A (-9d) | 2015-07-06 → 2015-06-29 23:00 A (-7d) | 1d? → 15h | 0% → 100% |  | none → 78 | was named Actualizaciones de documentos; resources none → Equipo de Oficina [50%] |
| 80 | **Gestion de RRHH** | 2015-07-08 → 2015-06-29 09:00 A (-9d) | 2015-07-10 → 2015-06-29 13:00 A (-11d) | 3.25d → 4h | 0% → 100% |  | none → 77 | resources none → Analista; Programador 2 |
| 81 | Asignacion del personal al trabajo | 2015-07-08 → 2015-06-29 09:00 A (-9d) | 2015-07-08 → 2015-06-29 13:00 A (-9d) | 1d? → 4h | 0% → 100% |  |  | was named Asignacion del personal; resources none → Analista |
| 82 | **Gestion de Comunicación** | 2015-06-11 → 2015-06-30 09:00 A (+19d) | 2015-06-11 → 2015-06-30 17:00 A (+19d) | 1d → 8h | 0% → 100% |  | none → 80 | resources Karen Gomez → Administrador |
| 83 | Gestionar comunicaciones del proyecto | 2015-06-11 → 2015-06-30 09:00 A (+19d) | 2015-06-11 → 2015-06-30 17:00 A (+19d) | 1d? → 8h | 0% → 100% |  |  | was named Actualizacion de los documentos; resources none → Equipo de Computo |
| 84 | **Gestion de Interesados** | 2015-07-16 → 2015-07-01 09:00 A (-15d) | 2015-07-17 → 2015-07-02 17:00 A (-15d) | 2.25d → 2d | 0% → 100% |  | none → 82 | resources none → Equipo de Computo; Equipo de Oficina [50%] |
| 85 | Gestionar participacion de los interesados | 2015-05-05 → 2015-07-01 09:00 A (+57d) | 2015-05-06 → 2015-07-02 17:00 A (+57d) | 1d? → 16h | 0% → 100% |  |  | was named <Tarea nueva>; resources none → Equipo de Oficina [50%] |
| 86 | Fin fase | 2015-07-16 → 2015-07-02 17:00 (-14d) | 2015-07-16 → 2015-07-02 17:00 (-14d) |  |  | none → 0d | none → 85 | resources none → Equipo de Computo |
| 87 | **SEGUIMIENTO Y CONTROL** | 2015-07-20 → 2015-07-02 09:00 A (-18d) | 2015-08-25 → 2015-08-01 11:00 (-24d) | 31.62d → 27d | 0% → 95% | 0d → none |  | resources Karen Gomez → Administrador |
| 88 | **Gestion de Integracion** | 2015-07-20 → 2015-07-02 09:00 A (-18d) | 2015-07-23 → 2015-07-20 17:00 (-3d) | 4.25d → 16d | 0% → 93% |  |  |  |
| 89 | Monitorear y Controlar el trabajo del proyecto | 2015-07-20 → 2015-07-02 09:00 A (-18d) | 2015-07-20 → 2015-07-02 13:00 (-18d) | 1d? → 4h | 0% → 90% |  |  | was named Solicitud de Cambios; resources none → Administrador |
| 90 | Aceptacion de cambios | 2015-07-20 → 2015-07-03 09:00 A (-17d) | 2015-07-20 → 2015-07-03 23:00 (-17d) | 1d? → 8h | 0% → 95% | none → 13.38d | none → 89 | was named Informes de desempeño de trabajo; resources none → Administrador |
| 91 | **Gestion del Alcance** | 2015-07-23 → 2015-07-04 09:00 A (-19d) | 2015-07-27 → 2015-07-07 16:00 (-20d) | 4.38d → 17h | 0% → 99% |  | none → 88 | resources Franklin Gomez → Analista |
| 92 | Validar Alcance | 2015-07-23 → 2015-07-04 09:00 A (-19d) | 2015-07-23 → 2015-07-06 15:00 (-17d) | 1d? → 8h | 0% → 98% |  |  | was named Solicitudes de Cambio; resources none → Administrador |
| 93 | Controlar Alcance | 2015-07-23 → 2015-07-06 14:00 A (-17d) | 2015-07-23 → 2015-07-07 15:00 A (-16d) | 1d? → 9h | 0% → 100% |  | none → 92 | was named Informes de desempeño de trabajo; resources none → Administrador |
| 94 | **Gestion del Tiempo** | 2015-07-28 → 2015-07-08 09:00 A (-20d) | 2015-07-30 → 2015-07-09 17:00 A (-21d) | 3.25d → 2d | 0% → 100% |  | none → 91 | resources Karen Gomez → Administrador |
| 95 | Controlar Cronograma | 2015-07-28 → 2015-07-08 09:00 A (-20d) | 2015-07-28 → 2015-07-09 17:00 A (-19d) | 1d? → 2d | 0% → 100% |  |  | was named Informes de desempeño de trabajo; resources none → Programador 2 |
| 96 | **Gestion de Costos** | 2015-07-31 → 2015-07-10 09:00 A (-21d) | 2015-08-04 → 2015-07-11 11:00 (-24d) | 4.38d → 2d | 0% → 50% |  | none → 94 | resources Karen Gomez → Administrador |
| 97 | Controlar Costos | 2015-07-31 → 2015-07-10 09:00 A (-21d) | 2015-07-31 → 2015-07-11 11:00 (-20d) | 1d? → 2d | 0% → 50% |  |  | was named Informes de desempeño de trabajo; resources none → Equipo de Computo; Equipo de Oficina [50%]; Impresiones [50%] |
| 98 | **Gestion de Calidad** | 2015-08-05 → 2015-07-13 09:00 A (-23d) | 2015-08-07 → 2015-07-14 17:00 A (-24d) | 3.25d → 2d | 0% → 100% |  | none → 96 | resources none → Programador 1 |
| 99 | Controlar calidad | 2015-08-05 → 2015-07-13 09:00 A (-23d) | 2015-08-05 → 2015-07-14 17:00 A (-22d) | 1d? → 2d | 0% → 100% |  |  | was named Medidas de Control de Calidad; resources none → Administrador |
| 100 | **Gestion de Comunicaciones** | 2015-08-10 → 2015-07-15 09:00 A (-26d) | 2015-08-12 → 2015-07-16 17:00 A (-27d) | 3.25d → 2d | 0% → 100% |  | none → 98 | resources none → Analista |
| 101 | Controlar comunicación | 2015-08-10 → 2015-07-15 09:00 A (-26d) | 2015-08-10 → 2015-07-16 17:00 A (-25d) | 1d? → 2d | 0% → 100% |  |  | was named Informes de desempeño de trabajo; resources none → Administrador |
| 102 | **Gestion de Riesgos** | 2015-08-13 → 2015-07-17 09:00 A (-27d) | 2015-08-14 → 2015-07-18 11:00 A (-27d) | 2.25d → 2d | 0% → 100% |  | none → 100 | resources Miguel Siguenza → Programador 1 |
| 103 | Controlar Riesgos | 2015-08-13 → 2015-07-17 09:00 A (-27d) | 2015-08-13 → 2015-07-18 11:00 A (-26d) | 1d? → 2d | 0% → 100% |  |  | was named Informes de desempeño de trabajo; resources none → Analista |
| 104 | **Gestion de Interesados** | 2015-08-18 → 2015-07-20 09:00 A (-29d) | 2015-08-19 → 2015-07-21 17:00 A (-29d) | 2.25d → 2d | 0% → 100% |  | none → 102 | resources none → Administrador; Analista; Programador 1; Programador 2 |
| 105 | Controlar Participacion de Interesados | 2015-08-18 → 2015-07-20 09:00 A (-29d) | 2015-08-18 → 2015-07-21 17:00 A (-28d) | 1d? → 2d | 0% → 100% |  |  | was named Informes de desempeño de trabajo; resources none → Administrador |
| 106 | **Metodologia UWE** | 2015-08-20 → 2015-07-21 17:00 A (-30d) | 2015-08-25 → 2015-08-01 11:00 (-24d) | 5.38d → 10d | 0% → 99% |  | none → 104 | resources Alejandro Marquez → Programador 2; Equipo de Oficina [50%]; Programador 1 |
| 107 | Interfaces Abstractas | 2015-08-20 → 2015-07-21 17:00 A (-30d) | 2015-08-20 → 2015-07-23 17:00 A (-28d) | 1d → 2d | 0% → 100% |  |  |  |
| 108 | Definir StoryBoard | 2015-08-20 → 2015-07-25 09:00 A (-26d) | 2015-08-20 → 2015-07-28 15:00 A (-23d) | 1d → 2d | 0% → 100% |  | none → 107 |  |
| 109 | Prototipos de Interfaces | 2015-08-20 → 2015-07-28 15:00 A (-23d) | 2015-08-20 → 2015-08-01 09:00 A (-19d) | 1d → 4d | 0% → 100% |  | none → 108 |  |
| 111 | **CIERRE** | 2015-08-26 → 2015-08-05 09:00 A (-21d) | 2015-08-31 → 2015-08-26 17:00 (-5d) | 4.12d → 19d | 0% → 99% | 0d → none |  | resources Karen Gomez → Administrador; Analista |
| 112 | **Gestion de Integracion** | 2015-08-26 → 2015-08-05 09:00 A (-21d) | 2015-08-26 → 2015-08-08 11:00 A (-18d) | 1.25d → 4d | 0% → 100% |  |  | resources none → Administrador |
| 113 | Transferencia de producto | 2015-08-26 → 2015-08-05 09:00 A (-21d) | 2015-08-26 → 2015-08-07 23:00 A (-19d) | 1d? → 3d | 0% → 100% |  |  | resources none → Administrador |
| 114 | Actualizaciones de documentos | 2015-08-26 → 2015-08-07 17:00 A (-19d) | 2015-08-26 → 2015-08-08 11:00 A (-18d) | 1d? → 1d | 0% → 100% |  | none → 113 | resources none → Equipo de Computo; Equipo de Oficina [50%]; Impresiones [50%] |
| 115 | **Gestion de Adquisiciones** | 2015-08-27 → 2015-08-10 17:00 A (-17d) | 2015-08-27 → 2015-08-19 17:00 A (-8d) | 1.25d → 8d | 0% → 100% |  | none → 112 | resources none → Administrador |
| 116 | Adquisiciones cerradas | 2015-08-27 → 2015-08-10 17:00 A (-17d) | 2015-08-27 → 2015-08-13 17:00 A (-14d) | 1d? → 3d | 0% → 100% |  |  | resources none → Equipo de Computo; Equipo de Oficina [50%] |
| 117 | Actualizaciones de documentos | 2015-08-27 → 2015-08-15 11:00 A (-12d) | 2015-08-27 → 2015-08-18 17:00 A (-9d) | 1d? → 2d | 0% → 100% |  | none → 116 | resources none → Equipo de Computo; Equipo de Oficina [50%]; Impresiones [50%] |
| 118 | **Metodologia UWE** | 2015-08-26 → 2015-08-19 17:00 A (-7d) | 2015-08-31 → 2015-08-26 17:00 A (-5d) | 5.38d → 6d | 0% → 100% |  | none → 115 | resources Alejandro Marquez → Programador 2; Programador 1 |
| 119 | Prueba del Sistema | 2015-08-26 → 2015-08-19 17:00 A (-7d) | 2015-08-26 → 2015-08-22 11:00 A (-4d) | 1d → 3d | 0% → 100% |  |  | resources Equipo de Computo → Equipo de Computo; Equipo de Oficina [50%] |
| 120 | Plan de Instalacion | 2015-08-26 → 2015-08-22 11:00 A (-4d) | 2015-08-26 → 2015-08-26 17:00 A | 1d → 3d | 0% → 100% |  | none → 119 | resources Equipo de Computo → Equipo de Computo; Equipo de Oficina [50%] |
| 121 | Fin fase | 2015-08-26 → 2015-08-26 17:00 | 2015-08-26 → 2015-08-26 17:00 | 1d? → 0d |  |  | none → 120 | resources none → Equipo de Computo |
| 122 | FIN | 2015-08-05 → 2015-08-26 17:00 (+21d) | 2015-08-05 → 2015-08-26 17:00 (+21d) |  |  | none → 0d | none → 121 | resources none → Equipo de Computo; Equipo de Oficina [50%]; Impresiones [50%] |

## Version 3 (saved 2015-08-25, file SWGH-RCA - Verison 2.mpp)

Note of the change: avance

Last finish stays 2015-08-26.

Changed:

| ID | Task | Start | Finish | Duration | Complete | Other |
| --- | --- | --- | --- | --- | --- | --- |
| 19 | **Gestion de Integracion** | 2015-05-13 09:00 A → 2015-05-13 14:00 | 2015-05-13 18:00 A → 2015-05-13 23:00 | 9h → 1d | 100% → 99% |  |
| 20 | Plan para la direccion de proyecto | 2015-05-13 14:00 A → 2015-05-13 09:00 A | 2015-05-13 16:00 A → 2015-05-13 23:00 A | 2h → 8h |  | resources Analista [112.5%] → Analista [135%] |

## Version 4 (saved 2015-08-25, file SWGH-RCA - Verison 2.mpp)

Note of the change: ccfg

Last finish stays 2015-08-26. Complete tasks 62 → 63.

Changed:

| ID | Task | Start | Finish | Complete | Total float |
| --- | --- | --- | --- | --- | --- |
| 122 | FIN | 2015-08-26 17:00 A | 2015-08-26 17:00 A | 0% → 100% | 0d → none |

## Version 5 (saved 2015-08-27, file SWGH-RCA - Verison 2.mpp)

Note of the change: Cambios

Last finish stays 2015-08-26.

Changed:

| ID | Task | Predecessors | Other |
| --- | --- | --- | --- |
| 13 | **Metodologia UWE** |  | resources Programador 2 → Programador 2; Impresiones [50%]; Programador 1 |
| 82 | **Gestion de Comunicación** |  | resources Administrador → Administrador; Programador 1 |
| 121 | Fin fase |  | resources Equipo de Computo → none |
| 122 | FIN | 121 → 2 | resources Equipo de Computo; Equipo de Oficina [50%]; Impresiones [50%] → none |
