# SWGH-RCA

How a schedule from MS Project changed from version to version. A marks actual dates.

## Version 1 (saved 2015-08-09, file SWGH-RCA.mpp)

Note of the change: fygytytyty

| ID | WBS | Task | Duration | Start | Finish | Predecessors | Total float |
| --- | --- | --- | --- | --- | --- | --- | --- |
| 1 | 1 | **SWGH-RCA** | 104.38d | 2015-05-05 | 2015-08-31 |  |  |
| 2 | 1.1 | **Inicio** | 104.38d | 2015-05-05 | 2015-08-31 |  |  |
| 3 | 1.1.1 | **INICIACION** | 8.38d | 2015-05-05 | 2015-05-13 |  |  |
| 4 | 1.1.1.1 | **Gestion de Integracion** | 2.25d | 2015-05-05 | 2015-05-06 |  |  |
| 5 |  | Acta de Constitucion | 1d | 2015-05-05 | 2015-05-05 |  |  |
| 6 |  | Reunion | 1d | 2015-05-06 | 2015-05-06 | 5 |  |
| 7 | 1.1.1.2 | **Gestion de Interesados** | 2.25d | 2015-05-06 | 2015-05-07 | 4 |  |
| 8 |  | Registro de Interesados | 4h | 2015-05-06 | 2015-05-06 |  |  |
| 9 |  | Reuniones | 2h | 2015-05-07 | 2015-05-07 | 8 |  |
| 10 | 1.1.1.3 | **Metodologia UWE** | 6.38d | 2015-05-07 | 2015-05-13 | 7 |  |
| 11 |  | Caso de Uso | 2d | 2015-05-08 | 2015-05-09 |  |  |
| 12 |  | Caso de Uso Especificos | 1d | 2015-05-11 | 2015-05-11 | 11 |  |
| 13 |  | Diagrama de Actividades | 1d | 2015-05-12 | 2015-05-12 | 12 |  |
| 14 |  | Fin de la fase | 0d | 2015-05-13 | 2015-05-13 | 13 |  |
| 15 | 1.1.2 | **PLANIFICACION** | 44.12d | 2015-05-14 | 2015-07-02 | 3 |  |
| 16 | 1.1.2.1 | **Gestion de Integracion** | 1d | 2015-05-14 | 2015-05-15 |  | 0d |
| 17 |  | Plan para la direccion de proyecto | 1d | 2015-05-14 | 2015-05-15 |  | 0d |
| 18 | 1.1.2.2 | **Gestion del Alcance** | 6.38d | 2015-05-15 | 2015-05-21 | 16 |  |
| 19 |  | Plan de Gestion del Alcance | 4h | 2015-05-15 | 2015-05-15 |  |  |
| 20 |  | Plan de Gestion de Requisitos | 4h | 2015-05-15 | 2015-05-15 | 19 |  |
| 21 |  | Documentacion de requisitos | 1d | 2015-05-16 | 2015-05-16 | 20 |  |
| 22 |  | Matriz de trazabilidad de requisitos | 4h | 2015-05-18 | 2015-05-18 | 21 |  |
| 23 |  | Enunciado del Alcance | 1d | 2015-05-19 | 2015-05-19 | 22 |  |
| 24 |  | Linea Base del Alcance | 1d | 2015-05-20 | 2015-05-20 | 23 |  |
| 25 |  | Estructura de Desglose de Trabajo | 1d | 2015-05-21 | 2015-05-21 | 23 |  |
| 26 | 1.1.2.3 | **Gestion de Tiempo** | 10.5d | 2015-05-22 | 2015-06-02 | 18 |  |
| 27 |  | Plan Gestion del Cronograma | 1d | 2015-05-22 | 2015-05-22 |  |  |
| 28 |  | Matriz de asignacion de Responsables | 1d | 2015-05-22 | 2015-05-23 | 27 |  |
| 29 |  | Identificacion y Secuenciamiento de Actividades | 1d | 2015-05-25 | 2015-05-25 | 28 |  |
| 30 |  | Diagramas de red del cronograma | 2d | 2015-05-25 | 2015-05-27 | 29 | 2.12d |
| 31 |  | Estimacion de Recursos y Duracion de Actividades | 1d | 2015-05-28 | 2015-05-28 | 30 |  |
| 32 |  | Cronograma del Proyecto | 2d | 2015-05-28 | 2015-05-30 | 31 | 2.12d |
| 33 |  | Lista de Hitos | 1d | 2015-05-30 | 2015-06-01 | 32SS |  |
| 34 |  | Estructura de desglose de Recursos | 1d | 2015-06-02 | 2015-06-02 | 33 |  |
| 35 | 1.1.2.4 | **Gestion Costo** | 10.88d | 2015-06-03 | 2015-06-12 | 26 |  |
| 36 |  | Plan de Gestion de Costo | 1d | 2015-06-03 | 2015-06-03 |  |  |
| 37 |  | Estimacion de Costos | 4d | 2015-06-03 | 2015-06-08 | 36 | 1.12d |
| 38 |  | Presupuesto del Proyecto | 2d | 2015-06-08 | 2015-06-10 | 37 |  |
| 39 |  | Linea Base de Costos | 1d | 2015-06-10 | 2015-06-11 | 38 |  |
| 40 | 1.1.2.5 | **Gestion Calidad** | 3.38d | 2015-06-13 | 2015-06-17 | 35 | 0d |
| 41 |  | Plan Gestion de Calidad | 1d | 2015-06-13 | 2015-06-13 |  |  |
| 42 |  | Metricas de Calidad | 1d | 2015-06-15 | 2015-06-15 | 41 | 0.5d |
| 43 |  | Linea Base de Calidad | 1d | 2015-06-16 | 2015-06-16 | 42 | 0.5d |
| 44 |  | Matriz de Actividades de Calidad | 1d | 2015-06-17 | 2015-06-17 | 43 | 0.5d |
| 45 | 1.1.2.6 | **Gestion de RRHH** | 3.5d | 2015-06-18 | 2015-06-22 | 40 | -0.38d |
| 46 |  | Matriz de Asignacion de Responsables | 1d | 2015-06-18 | 2015-06-18 |  |  |
| 47 |  | Organigrama del Proyecto | 4h | 2015-06-19 | 2015-06-19 | 46 |  |
| 48 |  | Descripcion de Roles | 4h | 2015-06-19 | 2015-06-19 | 47 | 0d |
| 49 |  | Adqusicion del personal | 1d | 2015-06-20 | 2015-06-20 | 48 |  |
| 50 |  | Diagrama de Carga Personal | 4h | 2015-06-20 | 2015-06-22 | 49 |  |
| 51 |  | Plan de RRHH | 4h | 2015-06-22 | 2015-06-22 | 50 | -0.38d |
| 52 | 1.1.2.7 | **Gestion de Comunicación** | 1.88d | 2015-06-22 | 2015-06-24 | 45 | 0d |
| 53 |  | Plan de Gestion de Comunicación | 4h | 2015-06-22 | 2015-06-22 |  |  |
| 54 |  | Matriz de Comunicación del Proyecto | 1d | 2015-06-22 | 2015-06-23 | 53 | 0.12d |
| 55 |  | Glosario de Terminologias | 4h | 2015-06-23 | 2015-06-24 | 54 | 0.12d |
| 56 | 1.1.2.8 | **Gestion de Riesgos** | 3.25d | 2015-06-24 | 2015-06-26 | 52 |  |
| 57 |  | Plan de Gestion de Riesgos | 1d | 2015-06-24 | 2015-06-24 |  |  |
| 58 |  | Identificacion y Evaluacion Cualitativa de Riesgos | 1d | 2015-06-25 | 2015-06-25 |  |  |
| 59 |  | Plan de Respuesta a Riesgos | 1d | 2015-06-26 | 2015-06-26 |  |  |
| 60 | 1.1.2.9 | **Gestion de Adquisiciones** | 1.38d | 2015-06-27 | 2015-06-29 | 56 | 0d |
| 61 |  | Plan de Gestion de Adquisiciones | 1.25d | 2015-06-27 | 2015-06-27 |  |  |
| 62 |  | Matriz de Adquisiciones del Proyecto | 1d | 2015-06-29 | 2015-06-29 | 61 | 0.5d |
| 63 | 1.1.2.10 | **Gestion de Interesados** | 1.25d | 2015-06-30 | 2015-06-30 | 60 |  |
| 64 |  | Plan de Gestion de Interesados | 1d | 2015-06-30 | 2015-06-30 |  |  |
| 65 | 1.1.2.11 | **Metodologia UWE** | 4.25d | 2015-06-29 | 2015-07-02 | 63 |  |
| 66 |  | Modelo Entidad Relacion | 4h | 2015-06-29 | 2015-06-29 |  |  |
| 67 |  | Modelo Logico | 4h | 2015-06-29 | 2015-06-29 | 66 |  |
| 68 |  | Modelo Fisico | 1d | 2015-06-30 | 2015-06-30 | 67 |  |
| 69 |  | Diagrama de navegacion | 8h | 2015-06-30 | 2015-07-01 | 68 |  |
| 70 |  | Fin Fase | 0d | 2015-07-01 | 2015-07-01 | 69 |  |

| ID | WBS | Task | Duration | Start | Finish | Predecessors |
| --- | --- | --- | --- | --- | --- | --- |
| 71 | 1.1.3 | **EJECUCION** | 17d | 2015-07-02 | 2015-07-18 |  |
| 72 | 1.1.3.1 | **Gestion de Integracion** | 3d | 2015-07-03 | 2015-07-06 |  |
| 73 |  | Datos de desempeño del trabajo | 1d? | 2015-07-03 | 2015-07-03 |  |
| 74 |  | Solicitud de Cambios | 1d? | 2015-07-03 | 2015-07-03 |  |
| 75 |  | Actualizacion de documentos | 1d? | 2015-07-03 | 2015-07-03 |  |
| 76 | 1.1.3.2 | **Gestion de Calidad** | 2.25d | 2015-07-06 | 2015-07-07 |  |
| 77 |  | Solicitud de Cambios | 1d? | 2015-07-06 | 2015-07-06 |  |
| 78 |  | Actualizaciones de documentos | 1d? | 2015-07-06 | 2015-07-06 |  |
| 79 | 1.1.3.3 | **Gestion de RRHH** | 3.25d | 2015-07-08 | 2015-07-10 |  |
| 80 |  | Asignacion del personal | 1d? | 2015-07-08 | 2015-07-08 |  |
| 81 |  | Calendario de Recursos | 1d? | 2015-07-08 | 2015-07-08 |  |
| 82 |  | Evaluacion de desempeño | 1d? | 2015-07-08 | 2015-07-08 |  |
| 83 |  | Actualizacion de documentos | 1d? | 2015-07-08 | 2015-07-08 |  |
| 84 | 1.1.3.4 | **Gestion de Comunicación** | 1d | 2015-06-11 | 2015-06-11 |  |
| 85 |  | Comunicación del proyecto | 1d? | 2015-06-11 | 2015-06-11 |  |
| 86 |  | Actualizacion de los documentos | 1d? | 2015-06-11 | 2015-06-11 |  |
| 87 | 1.1.3.5 | **Gestion de Adquisiciones** | 3.25d | 2015-07-13 | 2015-07-15 |  |
| 88 |  | Vendedores Seleccionados | 1d? | 2015-07-13 | 2015-07-13 |  |
| 89 |  | Acuerdos | 1d? | 2015-07-13 | 2015-07-13 |  |
| 90 |  | Calendario de Recursos | 1d? | 2015-07-13 | 2015-07-13 |  |
| 91 |  | Solicitud de Cambios | 1d? | 2015-07-13 | 2015-07-13 |  |
| 92 |  | Actualizacion de Documentos | 1d? | 2015-07-13 | 2015-07-13 |  |
| 93 | 1.1.3.6 | **Gestion de Interesados** | 2.25d | 2015-07-16 | 2015-07-17 |  |
| 94 |  | Registro de incidentes | 1d? | 2015-07-16 | 2015-07-16 |  |
| 95 |  | Solicitudes de Cambio | 1d? | 2015-07-16 | 2015-07-16 |  |
| 96 |  | Actualizaciones de documentos | 1d? | 2015-07-16 | 2015-07-16 |  |
| 97 |  | Fin fase | 0d | 2015-07-16 | 2015-07-16 |  |
| 98 | 1.1.4 | **SEGUIMIENTO Y CONTROL** | 32.88d | 2015-07-20 | 2015-08-25 | 71 |
| 99 | 1.1.4.1 | **Gestion de Integracion** | 4.25d | 2015-07-20 | 2015-07-23 |  |
| 100 |  | Solicitud de Cambios | 1d? | 2015-07-20 | 2015-07-20 |  |
| 101 |  | Informes de desempeño de trabajo | 1d? | 2015-07-20 | 2015-07-20 |  |
| 102 |  | Solicitudes Aprobadas | 1d? | 2015-07-20 | 2015-07-20 |  |
| 103 |  | Registro de cambios | 1d? | 2015-07-20 | 2015-07-20 |  |
| 104 |  | Actualizaciones de documentos | 1d | 2015-07-20 | 2015-07-20 |  |
| 105 | 1.1.4.2 | **Gestion del Alcance** | 4.38d | 2015-07-23 | 2015-07-27 |  |
| 106 |  | Solicitudes de Cambio | 1d? | 2015-07-23 | 2015-07-23 |  |
| 107 |  | Informes de desempeño de trabajo | 1d? | 2015-07-23 | 2015-07-23 |  |
| 108 |  | Actualizacion de los documentos | 1d? | 2015-07-23 | 2015-07-23 |  |
| 109 | 1.1.4.3 | **Gestion del Tiempo** | 3.25d | 2015-07-28 | 2015-07-30 |  |
| 110 |  | Informes de desempeño de trabajo | 1d? | 2015-07-28 | 2015-07-28 |  |
| 111 |  | Pronostico del cronograma | 1d? | 2015-07-28 | 2015-07-28 |  |
| 112 |  | Solicitudes de cambio | 1d? | 2015-07-28 | 2015-07-28 |  |
| 113 |  | Actualizaciones de documentos | 1d? | 2015-07-28 | 2015-07-28 |  |
| 114 | 1.1.4.4 | **Gestion de Costos** | 4.38d | 2015-07-31 | 2015-08-04 |  |
| 115 |  | Informes de desempeño de trabajo | 1d? | 2015-07-31 | 2015-07-31 |  |
| 116 |  | Pronostico de Costos | 1d? | 2015-07-31 | 2015-07-31 |  |
| 117 |  | Solicitudes de Cambio | 1d? | 2015-07-31 | 2015-07-31 |  |
| 118 |  | Actualizaciones de documentos | 1d? | 2015-07-31 | 2015-07-31 |  |
| 119 | 1.1.4.5 | **Gestion de Calidad** | 3.25d | 2015-08-05 | 2015-08-07 |  |
| 120 |  | Medidas de Control de Calidad | 1d? | 2015-08-05 | 2015-08-05 |  |
| 121 |  | Cambios validos | 1d? | 2015-08-05 | 2015-08-05 |  |
| 122 |  | Informes de desempeño de trabajo | 1d? | 2015-08-05 | 2015-08-05 |  |
| 123 |  | Solicitudes de Cambio | 1d? | 2015-08-05 | 2015-08-05 |  |
| 124 |  | Actualizaciones de documentos | 1d? | 2015-08-05 | 2015-08-05 |  |
| 125 | 1.1.4.6 | **Gestion de Comunicaciones** | 3.25d | 2015-08-10 | 2015-08-12 |  |
| 126 |  | Informes de desempeño de trabajo | 1d? | 2015-08-10 | 2015-08-10 |  |
| 127 |  | Solicitudes de Cambio | 1d? | 2015-08-10 | 2015-08-10 |  |
| 128 |  | Actualizaciones de documentos | 1d? | 2015-08-10 | 2015-08-10 |  |
| 129 | 1.1.4.7 | **Gestion de Riesgos** | 2.25d | 2015-08-13 | 2015-08-14 |  |
| 130 |  | Informes de desempeño de trabajo | 1d? | 2015-08-13 | 2015-08-13 |  |
| 131 |  | Solicitudes de Cambio | 1d? | 2015-08-13 | 2015-08-13 |  |
| 132 |  | Actualizaciones de documentos | 1d? | 2015-08-13 | 2015-08-13 |  |
| 133 | 1.1.4.8 | **Gestion de Adquisiciones** | 0.88d | 2015-08-15 | 2015-08-17 |  |
| 134 |  | Informes de desempeño de trabajo | 1d? | 2015-08-15 | 2015-08-15 |  |
| 135 |  | Solicitudes de Cambio | 1d? | 2015-08-15 | 2015-08-15 |  |
| 136 |  | Actualizaciones de documentos | 1d? | 2015-08-15 | 2015-08-15 |  |
| 137 | 1.1.4.9 | **Gestion de Interesados** | 2.25d | 2015-08-18 | 2015-08-19 |  |
| 138 |  | Informes de desempeño de trabajo | 1d? | 2015-08-18 | 2015-08-18 |  |
| 139 |  | Solicitudes de Cambio | 1d? | 2015-08-18 | 2015-08-18 |  |
| 140 |  | Actualizacion de documentos | 1d? | 2015-08-18 | 2015-08-18 |  |

| ID | WBS | Task | Duration | Start | Finish | Predecessors |
| --- | --- | --- | --- | --- | --- | --- |
| 141 | 1.1.4.10 | **Metodologia UWE** | 5.38d | 2015-08-20 | 2015-08-25 |  |
| 142 |  | Interfaces Abstractas | 1d? | 2015-08-20 | 2015-08-20 |  |
| 143 |  | Definir StoryBoard | 1d? | 2015-08-20 | 2015-08-20 |  |
| 144 |  | Prototipos de Interfaces | 1d? | 2015-08-20 | 2015-08-20 |  |
| 145 |  | Fin Fase | 0d | 2015-08-20 | 2015-08-20 |  |
| 146 | 1.1.5 | **CIERRE** | 5.38d | 2015-08-26 | 2015-08-31 | 98 |
| 147 | 1.1.5.1 | **Gestion de Integracion** | 1.25d | 2015-08-26 | 2015-08-26 |  |
| 148 |  | Transferencia de producto | 1d? | 2015-08-26 | 2015-08-26 |  |
| 149 |  | Actualizaciones de documentos | 1d? | 2015-08-26 | 2015-08-26 |  |
| 150 | 1.1.5.2 | **Gestion de Adquisiciones** | 1.25d | 2015-08-27 | 2015-08-27 |  |
| 151 |  | Adquisiciones cerradas | 1d? | 2015-08-27 | 2015-08-27 |  |
| 152 |  | Actualizaciones de documentos | 1d? | 2015-08-27 | 2015-08-27 |  |
| 153 | 1.1.5.3 | **Metodologia UWE** | 5.38d | 2015-08-26 | 2015-08-31 |  |
| 154 |  | Prueba del Sistema | 1d? | 2015-08-26 | 2015-08-26 |  |
| 155 |  | Plan de Instalacion | 1d? | 2015-08-26 | 2015-08-26 |  |
| 156 |  | Fin fase | 1d? | 2015-08-26 | 2015-08-26 |  |
| 157 |  | FIN | 0d | 2015-08-05 | 2015-08-05 |  |

## Version 2 (saved 2015-08-14, file SWGH-RCA.mpp)

Note of the change: avancess

Last finish stays 2015-08-31.

Changed:

| ID | Task | Start | Finish | Duration | Total float | Other |
| --- | --- | --- | --- | --- | --- | --- |
| 3 | **INICIACION** |  |  | 8.38d → 7.12d | none → -1d | resources none → Franklin Gomez; Alejandro Marquez; Alimentos [50%]; Equipo de Computo; Equipo de Oficina [50%]; Impresiones [50%]; Karen Gomez; Miguel Siguenza; Transporte [50%] |
| 4 | **Gestion de Integracion** |  | 2015-05-06 → 2015-05-07 (+1d) | 2.25d → 2d | none → -1d | resources none → Franklin Gomez |
| 5 | Acta de Constitucion |  | 2015-05-05 → 2015-05-06 (+1d) |  | none → -1d | resources none → Alimentos [50%]; Transporte [50%] |
| 6 | Reunion |  | 2015-05-06 → 2015-05-07 (+1d) |  | none → -1d | resources none → Impresiones [50%]; Transporte [50%] |
| 10 | **Metodologia UWE** | 2015-05-07 → 2015-05-08 (+1d) |  | 6.38d → 4.12d | none → 0d | resources none → Alejandro Marquez |
| 15 | **PLANIFICACION** | 2015-05-14 → 2015-05-13 (-1d) |  | 44.12d → 43.88d | none → 0d | resources none → Miguel Siguenza |
| 16 | **Gestion de Integracion** | 2015-05-14 → 2015-05-13 (-1d) | 2015-05-15 → 2015-05-14 (-1d) |  | 0d → 1d |  |
| 17 | Plan para la direccion de proyecto | 2015-05-14 → 2015-05-13 (-1d) | 2015-05-15 → 2015-05-14 (-1d) |  | 0d → 1d |  |
| 29 | Identificacion y Secuenciamiento de Actividades |  |  |  |  | resources none → Franklin Gomez |
| 32 | Cronograma del Proyecto |  |  |  |  | resources none → Franklin Gomez |
| 35 | **Gestion Costo** |  |  |  |  | resources none → Franklin Gomez |
| 65 | **Metodologia UWE** |  |  |  |  | resources none → Alejandro Marquez |
| 71 | **EJECUCION** |  |  |  |  | resources none → Karen Gomez |
| 98 | **SEGUIMIENTO Y CONTROL** |  |  | 32.88d → 31.62d | none → 0d | resources none → Karen Gomez |
| 141 | **Metodologia UWE** |  |  |  |  | resources none → Alejandro Marquez |
| 146 | **CIERRE** |  |  | 5.38d → 4.12d | none → 0d | resources none → Karen Gomez |
| 153 | **Metodologia UWE** |  |  |  |  | resources none → Alejandro Marquez |

## Version 3 (saved 2015-08-14, file SWGH-RCA.mpp)

Note of the change: sdsdsd

Last finish stays 2015-08-31.

Changed:

| ID | Task | Duration | Total float | Other |
| --- | --- | --- | --- | --- |
| 8 | Registro de Interesados |  |  | resources none → Karen Gomez |
| 9 | Reuniones |  |  | resources none → Transporte [50%] |
| 11 | Caso de Uso |  |  | resources none → Impresiones [50%] |
| 12 | Caso de Uso Especificos |  |  | resources none → Impresiones [50%] |
| 13 | Diagrama de Actividades |  |  | resources none → Impresiones [50%] |
| 16 | **Gestion de Integracion** |  |  | resources none → Miguel Siguenza |
| 17 | Plan para la direccion de proyecto |  |  | resources none → Franklin Gomez |
| 20 | Plan de Gestion de Requisitos |  |  | resources none → Franklin Gomez |
| 21 | Documentacion de requisitos |  |  | resources none → Franklin Gomez |
| 26 | **Gestion de Tiempo** | 10.5d → 9.25d | none → 0d | resources none → Miguel Siguenza |
| 72 | **Gestion de Integracion** |  |  | resources none → Karen Gomez |
| 76 | **Gestion de Calidad** |  |  | resources none → Miguel Siguenza |
| 84 | **Gestion de Comunicación** |  |  | resources none → Karen Gomez |
| 105 | **Gestion del Alcance** |  |  | resources none → Franklin Gomez |
| 109 | **Gestion del Tiempo** |  |  | resources none → Karen Gomez |
| 114 | **Gestion de Costos** |  |  | resources none → Karen Gomez |
| 129 | **Gestion de Riesgos** |  |  | resources none → Miguel Siguenza |

## Version 4 (saved 2015-08-16, file SWGH-RCA - Verison 2.mpp)

Note of the change: AVANCES

Last finish 2015-08-31 → 2015-08-26 (-5d). Complete tasks 0 → 29.

Added:

| ID | Task | Duration | Start | Finish | Predecessors |
| --- | --- | --- | --- | --- | --- |
| 5 | Busqueda de la empresa | 2h | 2015-05-05 09:00 A | 2015-05-05 11:00 A |  |
| 6 | Reunion con el patrocinador | 2h | 2015-05-05 14:00 A | 2015-05-05 16:00 | 5 |
| 7 | Reunion con el gerente de la empresa | 2h | 2015-05-05 16:00 A | 2015-05-05 18:00 | 6 |
| 8 | Recopilar informacion | 2h | 2015-05-05 19:00 A | 2015-05-05 21:00 A | 7 |
| 9 | Enunciado del Trabajo del proyecto | 2h | 2015-05-05 21:00 A | 2015-05-05 23:00 A | 8 |
| 85 | Gestionar participacion de los interesados | 8h | 2015-07-01 09:00 A | 2015-07-01 17:00 A |  |
| 110 | Fin Fase | 0d | 2015-08-01 10:00 | 2015-08-01 10:00 | 109 |

Removed: 6 Reunion; 9 Reuniones; 14 Fin de la fase; 73 Datos de desempeño del trabajo; 75 Actualizacion de documentos; 81 Calendario de Recursos; 82 Evaluacion de desempeño; 83 Actualizacion de documentos; 85 Comunicación del proyecto; 87 Gestion de Adquisiciones; 88 Vendedores Seleccionados; 89 Acuerdos; 90 Calendario de Recursos; 91 Solicitud de Cambios; 92 Actualizacion de Documentos; 94 Registro de incidentes; 95 Solicitudes de Cambio; 96 Actualizaciones de documentos; 102 Solicitudes Aprobadas; 103 Registro de cambios; 104 Actualizaciones de documentos; 108 Actualizacion de los documentos; 111 Pronostico del cronograma; 112 Solicitudes de cambio; 113 Actualizaciones de documentos; 116 Pronostico de Costos; 117 Solicitudes de Cambio; 118 Actualizaciones de documentos; 121 Cambios validos; 122 Informes de desempeño de trabajo; 123 Solicitudes de Cambio; 124 Actualizaciones de documentos; 127 Solicitudes de Cambio; 128 Actualizaciones de documentos; 131 Solicitudes de Cambio; 132 Actualizaciones de documentos; 133 Gestion de Adquisiciones; 134 Informes de desempeño de trabajo; 135 Solicitudes de Cambio; 136 Actualizaciones de documentos; 139 Solicitudes de Cambio; 140 Actualizacion de documentos

Changed:

| ID | Task | Start | Finish | Duration | Complete | Total float | Predecessors | Other |
| --- | --- | --- | --- | --- | --- | --- | --- | --- |
| 1 | **SWGH-RCA** | 2015-05-05 → 2015-05-05 09:00 A | 2015-08-31 → 2015-08-26 17:00 (-5d) | 104.38d → 97.38d | 0% → 96% | none → 0d |  |  |
| 2 | **Inicio** | 2015-05-05 → 2015-05-05 09:00 A | 2015-08-31 → 2015-08-26 17:00 (-5d) | 104.38d → 97.38d | 0% → 96% | none → 0d |  |  |
| 3 | **INICIACION** | 2015-05-05 → 2015-05-05 09:00 A | 2015-05-13 → 2015-05-12 23:00 (-1d) | 7.12d → 7d | 0% → 93% | -1d → 0d |  | resources Franklin Gomez; Alejandro Marquez; Alimentos [50%]; Equipo de Computo; Equipo de Oficina [50%]; Impresiones [50%]; Karen Gomez; Miguel Siguenza; Transporte [50%] → Analista; Programador 2; Alimentos [50%]; Equipo de Computo; Equipo de Oficina [50%]; Impresiones [50%]; Administrador; Programador 1; Transporte [50%] |
| 4 | **Gestion de Integracion** | 2015-05-05 → 2015-05-05 09:00 A | 2015-05-07 → 2015-05-06 21:00 (-1d) | 2d → 1.75d | 0% → 87% | -1d → 5.25d |  | resources Franklin Gomez → Analista |
| 10 | Acta de Constitucion | 2015-05-05 → 2015-05-06 14:00 A (+1d) | 2015-05-06 → 2015-05-06 21:00 | 1d → 6h | 0% → 89% | -1d → 5.25d | none → 9 | constraint none → finish no earlier than 2015-05-06 19:00; resources Alimentos [50%]; Transporte [50%] → Alimentos [33.3%]; Transporte [33.3%] |
| 11 | **Gestion de Interesados** | 2015-05-06 → 2015-05-07 09:00 A (+1d) | 2015-05-07 → 2015-05-07 13:00 A | 2.25d → 4h | 0% → 100% |  |  |  |
| 12 | Registro de Interesados | 2015-05-06 → 2015-05-07 09:00 A (+1d) | 2015-05-06 → 2015-05-07 13:00 A (+1d) |  | 0% → 100% |  |  | resources Karen Gomez → Administrador |
| 13 | **Metodologia UWE** | 2015-05-08 → 2015-05-08 14:00 A | 2015-05-13 → 2015-05-12 23:00 (-1d) | 4.12d → 4d | 0% → 95% |  |  | resources Alejandro Marquez → Programador 2 |
| 14 | Caso de Uso | 2015-05-08 → 2015-05-08 14:00 A | 2015-05-09 → 2015-05-08 23:00 (-1d) | 2d → 1d | 0% → 95% | none → 0.95d |  | constraint none → start no earlier than 2015-05-08 09:00 |
| 15 | Caso de Uso Especificos | 2015-05-11 → 2015-05-09 08:00 A (-2d) | 2015-05-11 → 2015-05-09 18:00 (-2d) |  | 0% → 95% | none → 1.9d |  | constraint none → start no earlier than 2015-05-08 09:00; resources Impresiones [50%] → Impresiones [25%] |
| 16 | Diagrama de Actividades | 2015-05-12 → 2015-05-11 14:00 A (-1d) | 2015-05-12 → 2015-05-12 23:00 | 1d → 2d | 0% → 95% | none → 0d |  | constraint none → finish no earlier than 2015-05-09 19:00; resources Impresiones [50%] → Impresiones [25%] |
| 17 | Fin Fase | 2015-07-01 → 2015-05-13 14:00 (-49d) | 2015-07-01 → 2015-05-13 14:00 (-49d) |  |  |  | 72 → 16 |  |
| 18 | **PLANIFICACION** | 2015-05-13 → 2015-05-13 09:00 A | 2015-07-02 → 2015-06-23 17:00 (-9d) | 43.88d → 35.38d | 0% → 98% | 0d → 55d |  | resources Miguel Siguenza → Programador 1 |
| 19 | **Gestion de Integracion** | 2015-05-13 → 2015-05-13 09:00 | 2015-05-14 → 2015-05-13 18:00 (-1d) | 1d → 9h | 0% → 100% | 1d → none |  | resources Miguel Siguenza → none |
| 20 | Plan para la direccion de proyecto | 2015-05-13 → 2015-05-13 14:00 A | 2015-05-14 → 2015-05-13 16:00 A (-1d) | 1d → 2h | 0% → 100% | 1d → none |  | resources Franklin Gomez → Analista [112.5%] |
| 21 | **Gestion del Alcance** | 2015-05-15 → 2015-05-14 09:00 A (-1d) | 2015-05-21 → 2015-05-18 18:00 (-3d) | 6.38d → 33h | 0% → 98% |  |  |  |
| 22 | Plan de Gestion del Alcance | 2015-05-15 → 2015-05-14 09:00 A (-1d) | 2015-05-15 → 2015-05-14 13:00 (-1d) |  | 0% → 99% |  |  | resources none → Equipo de Oficina [50%] |
| 23 | Plan de Gestion de Requisitos | 2015-05-15 → 2015-05-14 14:00 A (-1d) | 2015-05-15 → 2015-05-14 16:00 (-1d) | 4h → 2h | 0% → 99% |  |  | resources Franklin Gomez → Analista |
| 24 | Documentacion de requisitos | 2015-05-16 → 2015-05-14 16:00 A (-2d) | 2015-05-16 → 2015-05-14 21:00 (-2d) | 1d → 4h | 0% → 99% |  |  | resources Franklin Gomez → Analista |
| 25 | Matriz de trazabilidad de requisitos | 2015-05-18 → 2015-05-14 21:00 A (-4d) | 2015-05-18 → 2015-05-15 02:00 (-3d) |  | 0% → 95% |  |  |  |
| 26 | Enunciado del Alcance | 2015-05-19 → 2015-05-15 14:00 A (-4d) | 2015-05-19 → 2015-05-15 18:00 (-4d) | 1d → 4h | 0% → 99% |  |  |  |
| 27 | Linea Base del Alcance | 2015-05-20 → 2015-05-15 19:00 A (-5d) | 2015-05-20 → 2015-05-15 23:00 A (-5d) | 1d → 4h | 0% → 100% |  |  |  |
| 28 | Estructura de Desglose de Trabajo | 2015-05-21 → 2015-05-16 08:00 A (-5d) | 2015-05-21 → 2015-05-16 12:00 (-5d) | 1d → 4h | 0% → 95% |  | 26 → 27 |  |
| 29 | **Gestion de Tiempo** | 2015-05-22 → 2015-05-19 09:00 A (-3d) | 2015-06-02 → 2015-05-22 18:00 (-11d) | 9.25d → 33h | 0% → 98% | 0d → none |  | resources Miguel Siguenza → none |
| 30 | Plan Gestion del Cronograma | 2015-05-22 → 2015-05-19 09:00 A (-3d) | 2015-05-22 → 2015-05-19 11:00 A (-3d) | 1d → 2h | 0% → 100% |  |  |  |
| 31 | Matriz de asignacion de Responsables | 2015-05-22 → 2015-05-19 14:00 A (-3d) | 2015-05-23 → 2015-05-19 17:00 A (-4d) | 1d → 3h | 0% → 100% |  |  |  |
| 32 | Identificacion y Secuenciamiento de Actividades | 2015-05-25 → 2015-05-19 14:00 A (-6d) | 2015-05-25 → 2015-05-19 16:00 (-6d) | 1d → 2h | 0% → 95% |  | 31 → 30 | resources Franklin Gomez → Analista |
| 33 | Diagramas de red del cronograma | 2015-05-25 → 2015-05-20 14:00 A (-5d) | 2015-05-27 → 2015-05-20 17:00 A (-7d) | 2d → 3h | 0% → 100% | 3.12d → none |  | constraint none → start no earlier than 2015-05-20 09:00 |
| 34 | Estimacion de Recursos y Duracion de Actividades | 2015-05-28 → 2015-05-20 17:00 A (-8d) | 2015-05-28 → 2015-05-20 22:00 (-8d) | 1d → 4h | 0% → 95% |  |  |  |
| 35 | Cronograma del Proyecto | 2015-05-28 → 2015-05-21 14:00 A (-7d) | 2015-05-30 → 2015-05-21 18:00 A (-9d) | 2d → 4h | 0% → 100% | 3.12d → none |  | constraint none → start no earlier than 2015-05-21 09:00; resources Franklin Gomez → Analista |
| 36 | Lista de Hitos | 2015-05-30 → 2015-05-21 19:00 A (-9d) | 2015-06-01 → 2015-05-21 21:00 (-11d) | 1d → 2h | 0% → 95% |  | 35SS → 35 |  |
| 37 | Estructura de desglose de Recursos | 2015-06-02 → 2015-05-21 21:00 A (-12d) | 2015-06-02 → 2015-05-22 02:00 (-11d) | 1d → 4h | 0% → 99% |  |  |  |
| 38 | **Gestion Costo** | 2015-06-03 → 2015-05-23 09:00 A (-11d) | 2015-06-12 → 2015-05-28 19:00 (-15d) | 10.88d → 35h | 0% → 97% |  |  | resources Franklin Gomez → Analista; Programador 2 |
| 39 | Plan de Gestion de Costo | 2015-06-03 → 2015-05-23 09:00 A (-11d) | 2015-06-03 → 2015-05-23 15:00 A (-11d) | 1d → 4h | 0% → 100% |  |  |  |
| 40 | Estimacion de Costos | 2015-06-03 → 2015-05-25 14:00 A (-9d) | 2015-06-08 → 2015-05-25 23:00 (-14d) | 4d → 8h | 0% → 95% | 1.12d → 0.45d |  | constraint none → start no earlier than 2015-05-25 09:00 |
| 41 | Presupuesto del Proyecto | 2015-06-08 → 2015-05-26 14:00 A (-13d) | 2015-06-10 → 2015-05-26 18:00 (-15d) | 2d → 4h | 0% → 90% |  |  |  |
| 42 | Linea Base de Costos | 2015-06-10 → 2015-05-26 19:00 A (-15d) | 2015-06-11 → 2015-05-27 20:00 A (-15d) | 1d → 9h | 0% → 100% |  |  |  |
| 43 | **Gestion Calidad** | 2015-06-13 → 2015-05-28 09:00 A (-16d) | 2015-06-17 → 2015-05-30 12:00 (-18d) | 3.38d → 25h | 0% → 97% | 0d → none |  |  |
| 44 | Plan Gestion de Calidad | 2015-06-13 → 2015-05-28 09:00 A (-16d) | 2015-06-13 → 2015-05-28 13:00 (-16d) | 1d → 4h | 0% → 99% |  |  |  |
| 45 | Metricas de Calidad | 2015-06-15 → 2015-05-28 14:00 A (-18d) | 2015-06-15 → 2015-05-28 18:00 A (-18d) | 1d → 4h | 0% → 100% | 0.5d → none |  |  |
| 46 | Linea Base de Calidad | 2015-06-16 → 2015-05-29 14:00 A (-18d) | 2015-06-16 → 2015-05-29 18:00 (-18d) | 1d → 4h | 0% → 95% | 0.5d → 0.95d |  | constraint none → start no earlier than 2015-05-29 09:00 |
| 47 | Matriz de Actividades de Calidad | 2015-06-17 → 2015-05-29 19:00 A (-19d) | 2015-06-17 → 2015-05-30 12:00 (-18d) | 1d → 8h | 0% → 95% | 0.5d → 74.88d |  | constraint none → finish no earlier than 2015-05-27 19:00 |
| 48 | **Gestion de RRHH** | 2015-06-18 → 2015-06-01 09:00 A (-17d) | 2015-06-22 → 2015-06-04 18:00 (-18d) | 3.5d → 33h | 0% → 99% | -0.38d → none |  | resources none → Analista |
| 49 | Matriz de Asignacion de Responsables | 2015-06-18 → 2015-06-01 09:00 A (-17d) | 2015-06-18 → 2015-06-01 13:00 A (-17d) | 1d → 4h | 0% → 100% |  |  |  |
| 50 | Organigrama del Proyecto | 2015-06-19 → 2015-06-01 14:00 A (-18d) | 2015-06-19 → 2015-06-01 18:00 A (-18d) |  | 0% → 100% |  |  |  |
| 51 | Descripcion de Roles | 2015-06-19 → 2015-06-02 14:00 A (-17d) | 2015-06-19 → 2015-06-02 18:00 A (-17d) |  | 0% → 100% | 0d → none |  | constraint none → start no earlier than 2015-06-02 09:00 |
| 52 | Adquisicion del personal | 2015-06-20 → 2015-06-02 19:00 A (-18d) | 2015-06-20 → 2015-06-02 22:00 (-18d) | 1d → 3h | 0% → 95% |  |  | was named Adqusicion del personal |
| 53 | Diagrama de Carga Personal | 2015-06-20 → 2015-06-03 14:00 A (-17d) | 2015-06-22 → 2015-06-03 18:00 (-19d) |  | 0% → 99% | none → 71.88d |  | constraint none → start no earlier than 2015-06-03 09:00 |
| 54 | Plan de RRHH | 2015-06-22 → 2015-06-03 19:00 A (-19d) | 2015-06-22 → 2015-06-03 23:00 A (-19d) |  | 0% → 100% | -0.38d → none |  | constraint none → start no earlier than 2015-06-03 09:00 |
| 55 | **Gestion de Comunicación** | 2015-06-22 → 2015-06-05 09:00 A (-17d) | 2015-06-24 → 2015-06-06 12:00 (-18d) | 1.88d → 17h | 0% → 98% | 0d → none |  |  |
| 56 | Plan de Gestion de Comunicación | 2015-06-22 → 2015-06-05 09:00 A (-17d) | 2015-06-22 → 2015-06-05 13:00 A (-17d) |  | 0% → 100% |  |  |  |
| 57 | Matriz de Comunicación del Proyecto | 2015-06-22 → 2015-06-05 14:00 A (-17d) | 2015-06-23 → 2015-06-05 18:00 (-18d) | 1d → 4h | 0% → 95% | 0.12d → 0.49d |  |  |
| 58 | Glosario de Terminologias | 2015-06-23 → 2015-06-05 19:00 A (-18d) | 2015-06-24 → 2015-06-05 23:00 (-19d) |  | 0% → 99% | 0.12d → 69.38d |  | constraint none → start no earlier than 2015-06-03 09:00 |
| 59 | **Gestion de Riesgos** | 2015-06-24 → 2015-06-08 09:00 A (-16d) | 2015-06-26 → 2015-06-10 18:00 (-16d) | 3.25d → 25h | 0% → 90% |  |  | resources none → Programador 2 |
| 60 | Plan de Gestion de Riesgos | 2015-06-24 → 2015-06-08 09:00 A (-16d) | 2015-06-24 → 2015-06-08 13:00 A (-16d) | 1d → 4h | 0% → 100% |  |  |  |
| 61 | Identificacion y Evaluacion Cualitativa de Riesgos | 2015-06-25 → 2015-06-08 14:00 A (-17d) | 2015-06-25 → 2015-06-08 18:00 A (-17d) | 1d → 4h | 0% → 100% |  | none → 60 |  |
| 62 | Plan de Respuesta a Riesgos | 2015-06-26 → 2015-06-08 19:00 A (-18d) | 2015-06-26 → 2015-06-08 23:00 (-18d) | 1d → 4h | 0% → 70% |  | none → 61 |  |
| 63 | **Gestion de Adquisiciones** | 2015-06-27 → 2015-06-11 09:00 A (-16d) | 2015-06-29 → 2015-06-12 19:00 (-17d) | 1.38d → 17h | 0% → 95% | 0d → none |  |  |
| 64 | Plan de Gestion de Adquisiciones | 2015-06-27 → 2015-06-11 09:00 A (-16d) | 2015-06-27 → 2015-06-11 13:00 (-16d) | 1.25d → 4h | 0% → 95% |  |  |  |
| 65 | Matriz de Adquisiciones del Proyecto | 2015-06-29 → 2015-06-11 14:00 A (-18d) | 2015-06-29 → 2015-06-11 18:00 (-18d) | 1d → 4h | 0% → 95% | 0.5d → 64.88d |  | constraint none → finish no earlier than 2015-06-06 19:00 |
| 66 | **Gestion de Interesados** | 2015-06-30 → 2015-06-12 09:00 A (-18d) | 2015-06-30 → 2015-06-12 20:00 (-18d) |  | 0% → 100% |  |  |  |
| 67 | Plan de Gestion de Interesados | 2015-06-30 → 2015-06-12 09:00 A (-18d) | 2015-06-30 → 2015-06-12 15:00 A (-18d) | 1d → 6h | 0% → 100% |  |  |  |
| 68 | **Metodologia UWE** | 2015-06-29 → 2015-06-15 09:00 (-14d) | 2015-07-02 → 2015-06-23 17:00 (-9d) | 4.25d → 8d | 0% → 99% |  |  | resources Alejandro Marquez → Programador 2 |
| 69 | Modelo Entidad Relacion | 2015-06-29 → 2015-06-12 15:00 A (-17d) | 2015-06-29 → 2015-06-15 15:00 (-14d) | 4h → 2d | 0% → 99% |  |  | resources none → Equipo de Computo |
| 70 | Modelo Logico | 2015-06-29 → 2015-06-16 17:00 A (-13d) | 2015-06-29 → 2015-06-18 17:00 (-11d) | 4h → 2d | 0% → 99% |  |  | resources none → Equipo de Computo |
| 71 | Modelo Fisico | 2015-06-30 → 2015-06-18 17:00 A (-12d) | 2015-06-30 → 2015-06-20 11:00 (-10d) | 1d → 2d | 0% → 99% |  |  | resources none → Equipo de Computo |
| 72 | Diagrama de navegacion | 2015-06-30 → 2015-06-20 11:00 A (-10d) | 2015-07-01 → 2015-06-23 17:00 (-8d) | 8h → 2d | 0% → 99% |  |  | resources none → Equipo de Computo |
| 73 | Fin Fase | 2015-08-20 → 2015-06-23 17:00 (-58d) | 2015-08-20 → 2015-06-23 17:00 (-58d) |  |  |  | none → 72 |  |
| 74 | **EJECUCION** | 2015-07-02 → 2015-06-25 09:00 A (-7d) | 2015-07-18 → 2015-07-14 17:00 (-4d) |  | 0% → 97% |  | none → 18 | resources Karen Gomez → Administrador |
| 75 | **Gestion de Integracion** | 2015-07-03 → 2015-06-25 09:00 A (-8d) | 2015-07-06 → 2015-06-25 17:00 (-11d) | 3d → 8h | 0% → 95% |  |  | resources Karen Gomez → Administrador |

| ID | Task | Start | Finish | Duration | Complete | Total float | Predecessors | Other |
| --- | --- | --- | --- | --- | --- | --- | --- | --- |
| 76 | Gestionar el trabajo del proyecto | 2015-07-03 → 2015-06-25 09:00 A (-8d) | 2015-07-03 → 2015-06-25 17:00 (-8d) | 1d? → 8h | 0% → 95% |  |  | was named Solicitud de Cambios |
| 77 | **Gestion de Calidad** | 2015-07-06 → 2015-06-26 09:00 A (-10d) | 2015-07-07 → 2015-06-27 19:00 (-10d) | 2.25d → 2.75d | 0% → 95% |  | none → 75 | resources Miguel Siguenza → none |
| 78 | Aseguramiento de la calidad | 2015-07-06 → 2015-06-26 09:00 A (-10d) | 2015-07-06 → 2015-06-26 17:00 (-10d) | 1d? → 8h | 0% → 95% |  |  | was named Solicitud de Cambios |
| 79 | Datos de Desempeño del trabajo | 2015-07-06 → 2015-06-27 09:00 A (-9d) | 2015-07-06 → 2015-06-27 19:00 (-9d) | 1d? → 8h | 0% → 95% |  | none → 78 | was named Actualizaciones de documentos |
| 80 | **Gestion de RRHH** | 2015-07-08 → 2015-06-29 09:00 A (-9d) | 2015-07-10 → 2015-06-29 13:00 (-11d) | 3.25d → 4h | 0% → 99% |  | none → 77 | resources none → Analista; Programador 2 |
| 81 | Asignacion del personal al trabajo | 2015-07-08 → 2015-06-29 09:00 A (-9d) | 2015-07-08 → 2015-06-29 13:00 A (-9d) | 1d? → 4h | 0% → 100% |  |  | was named Asignacion del personal |
| 82 | **Gestion de Comunicación** | 2015-06-11 → 2015-06-30 09:00 A (+19d) | 2015-06-11 → 2015-06-30 17:00 (+19d) | 1d → 8h | 0% → 99% |  | none → 80 | resources Karen Gomez → Administrador |
| 83 | Gestionar comunicaciones del proyecto | 2015-06-11 → 2015-06-30 09:00 A (+19d) | 2015-06-11 → 2015-06-30 17:00 A (+19d) | 1d? → 8h | 0% → 100% |  |  | was named Actualizacion de los documentos |
| 84 | **Gestion de Interesados** | 2015-07-16 → 2015-07-01 09:00 A (-15d) | 2015-07-17 → 2015-07-01 17:00 A (-16d) | 2.25d → 8h | 0% → 100% |  | none → 82 |  |
| 86 | Fin fase | 2015-07-16 → 2015-07-01 17:00 (-15d) | 2015-07-16 → 2015-07-01 17:00 (-15d) |  |  |  | none → 85 |  |
| 87 | **SEGUIMIENTO Y CONTROL** | 2015-07-20 → 2015-07-02 09:00 A (-18d) | 2015-08-25 → 2015-08-01 10:00 (-24d) | 31.62d → 26.25d | 0% → 93% | 0d → 2.75d |  | resources Karen Gomez → Administrador |
| 88 | **Gestion de Integracion** | 2015-07-20 → 2015-07-02 09:00 A (-18d) | 2015-07-23 → 2015-07-04 12:00 (-19d) | 4.25d → 25h | 0% → 93% |  |  |  |
| 89 | Monitorear y Controlar el trabajo del proyecto | 2015-07-20 → 2015-07-02 09:00 A (-18d) | 2015-07-20 → 2015-07-02 13:00 (-18d) | 1d? → 4h | 0% → 90% |  |  | was named Solicitud de Cambios |
| 90 | Aceptacion de cambios | 2015-07-20 → 2015-07-03 09:00 A (-17d) | 2015-07-20 → 2015-07-03 17:00 (-17d) | 1d? → 8h | 0% → 95% | none → 1.12d | none → 89 | was named Informes de desempeño de trabajo |
| 91 | **Gestion del Alcance** | 2015-07-23 → 2015-07-04 09:00 A (-19d) | 2015-07-27 → 2015-07-07 16:00 (-20d) | 4.38d → 17h | 0% → 90% |  | none → 88 | resources Franklin Gomez → Analista |
| 92 | Validar Alcance | 2015-07-23 → 2015-07-04 09:00 A (-19d) | 2015-07-23 → 2015-07-04 19:00 (-19d) | 1d? → 8h | 0% → 90% |  |  | was named Solicitudes de Cambio |
| 93 | Controlar Alcance | 2015-07-23 → 2015-07-06 14:00 A (-17d) | 2015-07-23 → 2015-07-07 15:00 (-16d) | 1d? → 9h | 0% → 90% |  | none → 92 | was named Informes de desempeño de trabajo |
| 94 | **Gestion del Tiempo** | 2015-07-28 → 2015-07-08 09:00 A (-20d) | 2015-07-30 → 2015-07-09 17:00 (-21d) | 3.25d → 2d | 0% → 90% |  | none → 91 | resources Karen Gomez → Administrador |
| 95 | Controlar Cronograma | 2015-07-28 → 2015-07-08 09:00 A (-20d) | 2015-07-28 → 2015-07-09 17:00 (-19d) | 1d? → 2d | 0% → 90% |  |  | was named Informes de desempeño de trabajo |
| 96 | **Gestion de Costos** | 2015-07-31 → 2015-07-10 09:00 A (-21d) | 2015-08-04 → 2015-07-11 11:00 (-24d) | 4.38d → 2d | 0% → 90% |  | none → 94 | resources Karen Gomez → Administrador |
| 97 | Controlar Costos | 2015-07-31 → 2015-07-10 09:00 A (-21d) | 2015-07-31 → 2015-07-11 11:00 (-20d) | 1d? → 2d | 0% → 90% |  |  | was named Informes de desempeño de trabajo |
| 98 | **Gestion de Calidad** | 2015-08-05 → 2015-07-13 09:00 A (-23d) | 2015-08-07 → 2015-07-14 17:00 (-24d) | 3.25d → 2d | 0% → 90% |  | none → 96 |  |
| 99 | Controlar calidad | 2015-08-05 → 2015-07-13 09:00 A (-23d) | 2015-08-05 → 2015-07-14 17:00 (-22d) | 1d? → 2d | 0% → 90% |  |  | was named Medidas de Control de Calidad |
| 100 | **Gestion de Comunicaciones** | 2015-08-10 → 2015-07-15 09:00 A (-26d) | 2015-08-12 → 2015-07-16 17:00 (-27d) | 3.25d → 2d | 0% → 90% |  | none → 98 |  |
| 101 | Controlar comunicación | 2015-08-10 → 2015-07-15 09:00 A (-26d) | 2015-08-10 → 2015-07-16 17:00 (-25d) | 1d? → 2d | 0% → 90% |  |  | was named Informes de desempeño de trabajo |
| 102 | **Gestion de Riesgos** | 2015-08-13 → 2015-07-17 09:00 A (-27d) | 2015-08-14 → 2015-07-18 11:00 (-27d) | 2.25d → 2d | 0% → 90% |  | none → 100 | resources Miguel Siguenza → Programador 1 |
| 103 | Controlar Riesgos | 2015-08-13 → 2015-07-17 09:00 A (-27d) | 2015-08-13 → 2015-07-18 11:00 (-26d) | 1d? → 2d | 0% → 90% |  |  | was named Informes de desempeño de trabajo |
| 104 | **Gestion de Interesados** | 2015-08-18 → 2015-07-20 09:00 A (-29d) | 2015-08-19 → 2015-07-21 17:00 A (-29d) | 2.25d → 1.38d | 0% → 100% |  | none → 102 |  |
| 105 | Controlar Participacion de Interesados | 2015-08-18 → 2015-07-20 09:00 A (-29d) | 2015-08-18 → 2015-07-21 17:00 A (-28d) | 1d? → 2d | 0% → 100% |  |  | was named Informes de desempeño de trabajo |
| 106 | **Metodologia UWE** | 2015-08-20 → 2015-07-21 17:00 A (-30d) | 2015-08-25 → 2015-08-01 10:00 (-24d) | 5.38d → 9.88d | 0% → 95% | none → 2.75d | none → 104 | resources Alejandro Marquez → Programador 2; Equipo de Oficina [50%]; Programador 1 |
| 107 | Interfaces Abstractas | 2015-08-20 → 2015-07-21 17:00 A (-30d) | 2015-08-20 → 2015-07-23 17:00 (-28d) | 1d? → 2d | 0% → 95% |  |  | resources none → Equipo de Oficina [50%] |
| 108 | Definir StoryBoard | 2015-08-20 → 2015-07-25 09:00 A (-26d) | 2015-08-20 → 2015-07-28 15:00 (-23d) | 1d? → 2d | 0% → 95% |  | none → 107 | resources none → Equipo de Computo |
| 109 | Prototipos de Interfaces | 2015-08-20 → 2015-07-28 15:00 A (-23d) | 2015-08-20 → 2015-08-01 10:00 (-19d) | 1d? → 4.12d | 0% → 95% | none → 2.75d | none → 108 | resources none → Equipo de Computo |
| 111 | **CIERRE** | 2015-08-26 → 2015-08-05 09:00 A (-21d) | 2015-08-31 → 2015-08-26 17:00 (-5d) | 4.12d → 18.38d | 0% → 99% |  |  | resources Karen Gomez → Administrador; Analista |
| 112 | **Gestion de Integracion** | 2015-08-26 → 2015-08-05 09:00 A (-21d) | 2015-08-26 → 2015-08-11 18:00 (-15d) | 1.25d → 6.12d | 0% → 99% |  |  | resources none → Analista |
| 113 | Transferencia de producto | 2015-08-26 → 2015-08-05 09:00 A (-21d) | 2015-08-26 → 2015-08-07 17:00 A (-19d) | 1d? → 3d | 0% → 100% |  |  |  |
| 114 | Actualizaciones de documentos | 2015-08-26 → 2015-08-07 17:00 A (-19d) | 2015-08-26 → 2015-08-10 17:00 A (-16d) | 1d? → 2d | 0% → 100% |  | none → 113 |  |
| 115 | **Gestion de Adquisiciones** | 2015-08-27 → 2015-08-13 09:00 (-14d) | 2015-08-27 → 2015-08-19 17:00 (-8d) | 1.25d → 6d | 0% → 99% |  | none → 112 | resources none → Analista |
| 116 | Adquisiciones cerradas | 2015-08-27 → 2015-08-10 17:00 A (-17d) | 2015-08-27 → 2015-08-13 17:00 A (-14d) | 1d? → 3d | 0% → 100% |  |  | resources none → Equipo de Computo; Equipo de Oficina [50%] |
| 117 | Actualizaciones de documentos | 2015-08-27 → 2015-08-15 11:00 A (-12d) | 2015-08-27 → 2015-08-19 17:00 A (-8d) | 1d? → 3d | 0% → 100% |  | none → 116 |  |
| 118 | **Metodologia UWE** | 2015-08-26 → 2015-08-20 09:00 (-6d) | 2015-08-31 → 2015-08-26 17:00 (-5d) | 5.38d → 6d | 0% → 99% |  | none → 115 | resources Alejandro Marquez → Programador 2; Programador 1 |
| 119 | Prueba del Sistema | 2015-08-26 → 2015-08-19 17:00 A (-7d) | 2015-08-26 → 2015-08-22 11:00 (-4d) | 1d? → 3d | 0% → 99% |  |  | resources none → Equipo de Computo; Equipo de Oficina [50%] |
| 120 | Plan de Instalacion | 2015-08-26 → 2015-08-22 11:00 A (-4d) | 2015-08-26 → 2015-08-26 17:00 | 1d? → 3d | 0% → 99% |  | none → 119 | resources none → Equipo de Computo; Equipo de Oficina [50%] |
| 121 | Fin fase | 2015-08-26 → 2015-08-26 17:00 | 2015-08-26 → 2015-08-26 17:00 | 1d? → 0d |  |  | none → 120 |  |
| 122 | FIN | 2015-08-05 → 2015-08-26 17:00 (+21d) | 2015-08-05 → 2015-08-26 17:00 (+21d) |  |  | none → 0d | none → 121 |  |
